How a schedule from MS Project changed from version to version. A marks actual dates.

## Version 1 (data date 2021-02-27, saved 2021-03-05)

Note of the change: task 3 done report done

| ID | WBS | Task | Duration | Start | Finish | Predecessors | Total float | Constraint |
| --- | --- | --- | --- | --- | --- | --- | --- | --- |
| 1 |  | Начало проекта | 0w | 2021-03-01 08:00 | 2021-03-01 08:00 |  | 51.05d |  |
| 2 | 2 | **Создание интерфейса** | 91.55d | 2021-03-01 10:00 | 2021-07-12 15:23 | 1 | 0d |  |
| 3 | 2.1 | **Разработка дизайна интерфейса** | 25.62d | 2021-03-01 10:00 | 2021-04-06 16:00 |  | 50.92d |  |
| 4 |  | Разработка 2D графических элементов | 3w | 2021-03-01 10:00 | 2021-03-23 13:00 |  | 50.92d |  |
| 5 |  | Разработка 3D графичиских элементов | 2w | 2021-03-01 10:00 | 2021-03-16 12:00 | 4SS | 50.92d |  |
| 6 |  | Создание заставки | 3w | 2021-03-16 12:00 | 2021-04-06 16:00 | 5 | 50.92d |  |
| 7 |  | Программирование интерфейса | 3w | 2021-06-21 15:23 | 2021-07-12 15:23 | 3, 12 | 0d |  |
| 8 | 3 | **Построение базы объектов** | 85.25d | 2021-03-23 14:00 | 2021-07-23 16:00 |  | 14.76d |  |
| 9 |  | Анализ и построение структуры базы объектов | 2w | 2021-03-23 14:00 | 2021-04-06 16:00 |  | 14.76d |  |
| 10 |  | Программирование средств обработки базы объектов | 3w | 2021-04-06 16:00 | 2021-04-27 16:00 | 9 | 14.76d |  |
| 11 |  | Наполнение базы объектов | 12w | 2021-04-27 16:00 | 2021-07-23 16:00 | 10 | 14.76d |  |
| 12 | 4 | **Создание ядра GIS** | 76.55d | 2021-03-01 10:00 | 2021-06-21 15:23 |  | 0d |  |
| 13 |  | Анализ и проектирование ядра | 3w | 2021-03-01 10:00 | 2021-03-23 13:00 |  | 0d |  |
| 14 |  | Создание модели ядра | 5.12w | 2021-03-23 14:00 | 2021-04-28 10:00 | 13 | 0d |  |
| 15 |  | Тестирование модели ядра | 1w | 2021-04-28 10:00 | 2021-05-06 10:00 | 14 | 0d |  |
| 16 |  | Создание рабочей версии ядра | 6.11w | 2021-05-06 10:00 | 2021-06-21 15:23 | 15 | 0d |  |
| 17 |  | Создание мультимедиа - наполнения | 6w | 2021-04-06 16:00 | 2021-05-21 13:00 | 3 | 59.01d |  |
| 18 |  | Создание справочной системы | 2w | 2021-07-26 09:00 | 2021-08-09 16:00 | 7 | 3.76d |  |
| 19 | 7 | **Создание руководства пользователя** | 17.75d | 2021-06-28 15:23 | 2021-07-22 12:23 | 7FS-10d | 0d |  |
| 20 |  | Разработка дизайна руководства | 1w | 2021-06-28 15:23 | 2021-07-05 17:23 |  | 0d |  |
| 21 |  | Написание руководства пользователя | 3w | 2021-06-30 15:23 | 2021-07-22 12:23 | 20SS+2d | 0d |  |
| 22 | 8 | **Создание web - сайта и поддержка** | 24.25d | 2021-06-30 15:23 | 2021-08-03 17:23 |  | 0d |  |
| 23 |  | Разработка структуры сайта | 1d | 2021-06-30 15:23 | 2021-07-01 15:23 | 21SS | 0d |  |
| 24 |  | Разработка дизайна сайта | 1.4w | 2021-07-01 15:23 | 2021-07-13 10:23 | 23 | 0d |  |
| 25 |  | Наполнение сайта | 3w | 2021-07-13 10:23 | 2021-08-03 17:23 | 24 | 0d |  |
| 26 |  | Тестирование сайта | 2.52w | 2021-07-27 17:23 | 2021-08-13 14:02 | 22FS-1w | 0d |  |
| 27 |  | Сдача сайта в эксплуатацию | 0w | 2021-08-13 14:02 | 2021-08-13 14:02 | 26 | 0d |  |
| 28 | 11 | **Совещание** | 111.12d | 2021-03-01 09:00 | 2021-08-09 10:00 |  | 4.38d |  |
| 29 |  | Совещание 1 | 1h | 2021-03-01 09:00 | 2021-03-01 10:00 |  | 115.38d | start no earlier than 2021-03-01 08:00 |
| 30 |  | Совещание 2 | 1h | 2021-03-09 09:00 | 2021-03-09 10:00 |  | 110.38d | start no earlier than 2021-03-08 08:00 |
| 31 |  | Совещание 3 | 1h | 2021-03-15 09:00 | 2021-03-15 10:00 |  | 106.38d | start no earlier than 2021-03-15 08:00 |
| 32 |  | Совещание 4 | 1h | 2021-03-22 09:00 | 2021-03-22 10:00 |  | 101.38d | start no earlier than 2021-03-22 08:00 |
| 33 |  | Совещание 5 | 1h | 2021-03-29 09:00 | 2021-03-29 10:00 |  | 96.38d | start no earlier than 2021-03-29 08:00 |
| 34 |  | Совещание 6 | 1h | 2021-04-05 09:00 | 2021-04-05 10:00 |  | 91.38d | start no earlier than 2021-04-05 08:00 |
| 35 |  | Совещание 7 | 1h | 2021-04-12 09:00 | 2021-04-12 10:00 |  | 86.38d | start no earlier than 2021-04-12 08:00 |
| 36 |  | Совещание 8 | 1h | 2021-04-19 09:00 | 2021-04-19 10:00 |  | 81.38d | start no earlier than 2021-04-19 08:00 |
| 37 |  | Совещание 9 | 1h | 2021-04-26 09:00 | 2021-04-26 10:00 |  | 76.38d | start no earlier than 2021-04-26 08:00 |
| 38 |  | Совещание 10 | 1h | 2021-05-04 09:00 | 2021-05-04 10:00 |  | 71.38d | start no earlier than 2021-05-03 08:00 |
| 39 |  | Совещание 11 | 1h | 2021-05-11 09:00 | 2021-05-11 10:00 |  | 67.38d | start no earlier than 2021-05-10 08:00 |
| 40 |  | Совещание 12 | 1h | 2021-05-17 09:00 | 2021-05-17 10:00 |  | 63.38d | start no earlier than 2021-05-17 08:00 |
| 41 |  | Совещание 13 | 1h | 2021-05-24 09:00 | 2021-05-24 10:00 |  | 58.38d | start no earlier than 2021-05-24 08:00 |
| 42 |  | Совещание 14 | 1h | 2021-05-31 09:00 | 2021-05-31 10:00 |  | 53.38d | start no earlier than 2021-05-31 08:00 |
| 43 |  | Совещание 15 | 1h | 2021-06-07 09:00 | 2021-06-07 10:00 |  | 48.38d | start no earlier than 2021-06-07 08:00 |
| 44 |  | Совещание 16 | 1h | 2021-06-15 09:00 | 2021-06-15 10:00 |  | 43.38d | start no earlier than 2021-06-14 08:00 |
| 45 |  | Совещание 17 | 1h | 2021-06-21 09:00 | 2021-06-21 10:00 |  | 39.38d | start no earlier than 2021-06-21 08:00 |
| 46 |  | Совещание 18 | 1h | 2021-06-28 09:00 | 2021-06-28 10:00 |  | 34.38d | start no earlier than 2021-06-28 08:00 |
| 47 |  | Совещание 19 | 1h | 2021-07-05 09:00 | 2021-07-05 10:00 |  | 29.38d | start no earlier than 2021-07-05 08:00 |
| 48 |  | Совещание 20 | 1h | 2021-07-12 09:00 | 2021-07-12 10:00 |  | 24.38d | start no earlier than 2021-07-12 08:00 |
| 49 |  | Совещание 21 | 1h | 2021-07-19 09:00 | 2021-07-19 10:00 |  | 19.38d | start no earlier than 2021-07-19 08:00 |
| 50 |  | Совещание 22 | 1h | 2021-07-26 09:00 | 2021-07-26 10:00 |  | 14.38d | start no earlier than 2021-07-26 08:00 |
| 51 |  | Совещание 23 | 1h | 2021-08-02 09:00 | 2021-08-02 10:00 |  | 9.38d | start no earlier than 2021-08-02 08:00 |
| 52 |  | Совещание 24 | 1h | 2021-08-09 09:00 | 2021-08-09 10:00 |  | 4.38d | start no earlier than 2021-08-09 08:00 |

## Version 2 (data date 2021-02-27, saved 2021-03-05)

Note of the change: added variants 1

Last finish 2021-08-13 → 2021-08-18 (+5d).

Changed:

| ID | Task | Start | Finish | Duration | Total float | Other |
| --- | --- | --- | --- | --- | --- | --- |
| 1 | Начало проекта |  |  |  | 51.05d → 52.3d | baseline start none → 2021-03-01 08:00; baseline finish none → 2021-03-01 08:00 |
| 2 | **Создание интерфейса** |  | 2021-07-12 15:23 → 2021-07-14 15:23 (+2d) | 91.55d → 93.55d |  | baseline start none → 2021-03-01 10:00; baseline finish none → 2021-07-12 15:23 |
| 3 | **Разработка дизайна интерфейса** |  | 2021-04-06 16:00 → 2021-04-07 13:00 (+1d) | 25.62d → 26.38d | 50.92d → 52.17d | baseline start none → 2021-03-01 10:00; baseline finish none → 2021-04-06 16:00 |
| 4 | Разработка 2D графических элементов |  | 2021-03-23 13:00 → 2021-03-23 17:00 |  | 50.92d → 52.17d | baseline start none → 2021-03-01 10:00; baseline finish none → 2021-03-23 13:00 |
| 5 | Разработка 3D графичиских элементов |  | 2021-03-16 12:00 → 2021-03-16 15:00 |  | 50.92d → 52.17d | baseline start none → 2021-03-01 10:00; baseline finish none → 2021-03-16 12:00 |
| 6 | Создание заставки | 2021-03-16 12:00 → 2021-03-16 15:00 | 2021-04-06 16:00 → 2021-04-07 13:00 (+1d) |  | 50.92d → 52.17d | baseline start none → 2021-03-16 12:00; baseline finish none → 2021-04-06 16:00 |
| 7 | Программирование интерфейса | 2021-06-21 15:23 → 2021-06-23 15:23 (+2d) | 2021-07-12 15:23 → 2021-07-14 15:23 (+2d) |  |  | baseline start none → 2021-06-21 15:23; baseline finish none → 2021-07-12 15:23 |
| 8 | **Построение базы объектов** | 2021-03-23 14:00 → 2021-03-23 17:00 | 2021-07-23 16:00 → 2021-07-26 13:00 (+3d) | 85.25d → 85.62d | 14.76d → 16.96d | baseline start none → 2021-03-23 14:00; baseline finish none → 2021-07-23 16:00 |
| 9 | Анализ и построение структуры базы объектов | 2021-03-23 14:00 → 2021-03-23 17:00 | 2021-04-06 16:00 → 2021-04-07 13:00 (+1d) |  | 14.76d → 16.96d | baseline start none → 2021-03-23 14:00; baseline finish none → 2021-04-06 16:00 |
| 10 | Программирование средств обработки базы объектов | 2021-04-06 16:00 → 2021-04-07 14:00 (+1d) | 2021-04-27 16:00 → 2021-04-28 13:00 (+1d) |  | 14.76d → 16.96d | baseline start none → 2021-04-06 16:00; baseline finish none → 2021-04-27 16:00 |
| 11 | Наполнение базы объектов | 2021-04-27 16:00 → 2021-04-28 14:00 (+1d) | 2021-07-23 16:00 → 2021-07-26 13:00 (+3d) |  | 14.76d → 16.96d | baseline start none → 2021-04-27 16:00; baseline finish none → 2021-07-23 16:00 |
| 12 | **Создание ядра GIS** |  | 2021-06-21 15:23 → 2021-06-23 15:23 (+2d) | 76.55d → 78.55d |  | baseline start none → 2021-03-01 10:00; baseline finish none → 2021-06-21 15:23 |
| 13 | Анализ и проектирование ядра |  | 2021-03-23 13:00 → 2021-03-23 17:00 |  |  | baseline start none → 2021-03-01 10:00; baseline finish none → 2021-03-23 13:00 |
| 14 | Создание модели ядра | 2021-03-23 14:00 → 2021-03-23 17:00 | 2021-04-28 10:00 → 2021-04-29 11:00 (+1d) | 5.12w → 5.25w |  | baseline start none → 2021-03-23 14:00; baseline finish none → 2021-04-28 10:00 |
| 15 | Тестирование модели ядра | 2021-04-28 10:00 → 2021-04-29 11:00 (+1d) | 2021-05-06 10:00 → 2021-05-07 11:00 (+1d) |  |  | baseline start none → 2021-04-28 10:00; baseline finish none → 2021-05-06 10:00 |
| 16 | Создание рабочей версии ядра | 2021-05-06 10:00 → 2021-05-07 11:00 (+1d) | 2021-06-21 15:23 → 2021-06-23 15:23 (+2d) | 6.11w → 6.23w |  | baseline start none → 2021-05-06 10:00; baseline finish none → 2021-06-21 15:23 |
| 17 | Создание мультимедиа - наполнения | 2021-04-06 16:00 → 2021-04-07 14:00 (+1d) | 2021-05-21 13:00 → 2021-05-24 18:00 (+3d) |  | 59.01d → 60.46d | baseline start none → 2021-04-06 16:00; baseline finish none → 2021-05-21 13:00 |
| 18 | Создание справочной системы | 2021-07-26 09:00 → 2021-07-26 16:23 | 2021-08-09 16:00 → 2021-08-10 11:23 (+1d) |  | 3.76d → 6.16d | constraint none → start no earlier than 2021-07-26 10:00; baseline start none → 2021-07-26 10:00; baseline finish none → 2021-08-09 12:00 |
| 19 | **Создание руководства пользователя** | 2021-06-28 15:23 → 2021-06-30 15:23 (+2d) | 2021-07-22 12:23 → 2021-07-26 16:23 (+4d) | 17.75d → 18.12d |  | baseline start none → 2021-06-28 15:23; baseline finish none → 2021-07-22 16:23 |
| 20 | Разработка дизайна руководства | 2021-06-28 15:23 → 2021-06-30 15:23 (+2d) | 2021-07-05 17:23 → 2021-07-08 09:23 (+3d) |  |  | baseline start none → 2021-06-28 15:23; baseline finish none → 2021-07-06 09:23 |
| 21 | Написание руководства пользователя | 2021-06-30 15:23 → 2021-07-02 15:23 (+2d) | 2021-07-22 12:23 → 2021-07-26 16:23 (+4d) |  |  | baseline start none → 2021-06-30 15:23; baseline finish none → 2021-07-22 16:23 |
| 22 | **Создание web - сайта и поддержка** | 2021-06-30 15:23 → 2021-07-02 15:23 (+2d) | 2021-08-03 17:23 → 2021-08-06 14:23 (+3d) | 24.25d → 24.88d |  | baseline start none → 2021-06-30 15:23; baseline finish none → 2021-08-04 14:23 |
| 23 | Разработка структуры сайта | 2021-06-30 15:23 → 2021-07-02 15:23 (+2d) | 2021-07-01 15:23 → 2021-07-05 15:23 (+4d) |  |  | baseline start none → 2021-06-30 15:23; baseline finish none → 2021-07-01 15:23 |
| 24 | Разработка дизайна сайта | 2021-07-01 15:23 → 2021-07-05 15:23 (+4d) | 2021-07-13 10:23 → 2021-07-15 12:23 (+2d) |  |  | baseline start none → 2021-07-01 15:23; baseline finish none → 2021-07-13 12:23 |
| 25 | Наполнение сайта | 2021-07-13 10:23 → 2021-07-15 12:23 (+2d) | 2021-08-03 17:23 → 2021-08-06 14:23 (+3d) |  |  | baseline start none → 2021-07-13 12:23; baseline finish none → 2021-08-04 14:23 |
| 26 | Тестирование сайта | 2021-07-27 17:23 → 2021-07-30 14:23 (+3d) | 2021-08-13 14:02 → 2021-08-18 12:39 (+5d) | 2.52w → 2.56w |  | baseline start none → 2021-07-28 14:23; baseline finish none → 2021-08-16 12:39 |
| 27 | Сдача сайта в эксплуатацию | 2021-08-13 14:02 → 2021-08-18 12:39 (+5d) | 2021-08-13 14:02 → 2021-08-18 12:39 (+5d) |  |  | baseline start none → 2021-08-16 12:39; baseline finish none → 2021-08-16 12:39 |
| 28 | **Совещание** | 2021-03-01 09:00 → 2021-03-03 09:00 (+2d) | 2021-08-09 10:00 → 2021-08-11 10:00 (+2d) |  | 4.38d → 5.33d | baseline start none → 2021-03-01 09:00; baseline finish none → 2021-08-16 09:00 |
| 29 | Совещание 1 | 2021-03-01 09:00 → 2021-03-03 09:00 (+2d) | 2021-03-01 10:00 → 2021-03-03 10:00 (+2d) |  | 115.38d → 116.33d | constraint start no earlier than 2021-03-01 08:00 → start no earlier than 2021-03-03 08:00; baseline start none → 2021-03-01 09:00; baseline finish none → 2021-03-01 10:00 |
| 30 | Совещание 2 | 2021-03-09 09:00 → 2021-03-10 09:00 (+1d) | 2021-03-09 10:00 → 2021-03-10 10:00 (+1d) |  | 110.38d → 112.33d | constraint start no earlier than 2021-03-08 08:00 → start no earlier than 2021-03-10 08:00; baseline start none → 2021-03-09 09:00; baseline finish none → 2021-03-09 10:00 |
| 31 | Совещание 3 | 2021-03-15 09:00 → 2021-03-17 09:00 (+2d) | 2021-03-15 10:00 → 2021-03-17 10:00 (+2d) |  | 106.38d → 107.33d | constraint start no earlier than 2021-03-15 08:00 → start no earlier than 2021-03-17 08:00; baseline start none → 2021-03-15 09:00; baseline finish none → 2021-03-15 10:00 |
| 32 | Совещание 4 | 2021-03-22 09:00 → 2021-03-24 09:00 (+2d) | 2021-03-22 10:00 → 2021-03-24 10:00 (+2d) |  | 101.38d → 102.33d | constraint start no earlier than 2021-03-22 08:00 → start no earlier than 2021-03-24 08:00; baseline start none → 2021-03-22 09:00; baseline finish none → 2021-03-22 10:00 |
| 33 | Совещание 5 | 2021-03-29 09:00 → 2021-03-31 09:00 (+2d) | 2021-03-29 10:00 → 2021-03-31 10:00 (+2d) |  | 96.38d → 97.33d | constraint start no earlier than 2021-03-29 08:00 → start no earlier than 2021-03-31 08:00; baseline start none → 2021-03-29 09:00; baseline finish none → 2021-03-29 10:00 |
| 34 | Совещание 6 | 2021-04-05 09:00 → 2021-04-07 09:00 (+2d) | 2021-04-05 10:00 → 2021-04-07 10:00 (+2d) |  | 91.38d → 92.33d | constraint start no earlier than 2021-04-05 08:00 → start no earlier than 2021-04-07 08:00; baseline start none → 2021-04-05 09:00; baseline finish none → 2021-04-05 10:00 |
| 35 | Совещание 7 | 2021-04-12 09:00 → 2021-04-14 09:00 (+2d) | 2021-04-12 10:00 → 2021-04-14 10:00 (+2d) |  | 86.38d → 87.33d | constraint start no earlier than 2021-04-12 08:00 → start no earlier than 2021-04-14 08:00; baseline start none → 2021-04-12 09:00; baseline finish none → 2021-04-12 10:00 |
| 36 | Совещание 8 | 2021-04-19 09:00 → 2021-04-21 09:00 (+2d) | 2021-04-19 10:00 → 2021-04-21 10:00 (+2d) |  | 81.38d → 82.33d | constraint start no earlier than 2021-04-19 08:00 → start no earlier than 2021-04-21 08:00; baseline start none → 2021-04-19 09:00; baseline finish none → 2021-04-19 10:00 |
| 37 | Совещание 9 | 2021-04-26 09:00 → 2021-04-28 09:00 (+2d) | 2021-04-26 10:00 → 2021-04-28 10:00 (+2d) |  | 76.38d → 77.33d | constraint start no earlier than 2021-04-26 08:00 → start no earlier than 2021-04-28 08:00; baseline start none → 2021-04-26 09:00; baseline finish none → 2021-04-26 10:00 |
| 38 | Совещание 10 | 2021-05-04 09:00 → 2021-05-05 09:00 (+1d) | 2021-05-04 10:00 → 2021-05-05 10:00 (+1d) |  | 71.38d → 73.33d | constraint start no earlier than 2021-05-03 08:00 → start no earlier than 2021-05-05 08:00; baseline start none → 2021-05-04 09:00; baseline finish none → 2021-05-04 10:00 |
| 39 | Совещание 11 | 2021-05-11 09:00 → 2021-05-12 09:00 (+1d) | 2021-05-11 10:00 → 2021-05-12 10:00 (+1d) |  | 67.38d → 69.33d | constraint start no earlier than 2021-05-10 08:00 → start no earlier than 2021-05-12 08:00; baseline start none → 2021-05-11 09:00; baseline finish none → 2021-05-11 10:00 |
| 40 | Совещание 12 | 2021-05-17 09:00 → 2021-05-19 09:00 (+2d) | 2021-05-17 10:00 → 2021-05-19 10:00 (+2d) |  | 63.38d → 64.33d | constraint start no earlier than 2021-05-17 08:00 → start no earlier than 2021-05-19 08:00; baseline start none → 2021-05-17 09:00; baseline finish none → 2021-05-17 10:00 |
| 41 | Совещание 13 | 2021-05-24 09:00 → 2021-05-26 09:00 (+2d) | 2021-05-24 10:00 → 2021-05-26 10:00 (+2d) |  | 58.38d → 59.33d | constraint start no earlier than 2021-05-24 08:00 → start no earlier than 2021-05-26 08:00; baseline start none → 2021-05-24 09:00; baseline finish none → 2021-05-24 10:00 |
| 42 | Совещание 14 | 2021-05-31 09:00 → 2021-06-02 09:00 (+2d) | 2021-05-31 10:00 → 2021-06-02 10:00 (+2d) |  | 53.38d → 54.33d | constraint start no earlier than 2021-05-31 08:00 → start no earlier than 2021-06-02 08:00; baseline start none → 2021-05-31 09:00; baseline finish none → 2021-05-31 10:00 |
| 43 | Совещание 15 | 2021-06-07 09:00 → 2021-06-09 09:00 (+2d) | 2021-06-07 10:00 → 2021-06-09 10:00 (+2d) |  | 48.38d → 49.33d | constraint start no earlier than 2021-06-07 08:00 → start no earlier than 2021-06-09 08:00; baseline start none → 2021-06-07 09:00; baseline finish none → 2021-06-07 10:00 |
| 44 | Совещание 16 | 2021-06-15 09:00 → 2021-06-16 09:00 (+1d) | 2021-06-15 10:00 → 2021-06-16 10:00 (+1d) |  | 43.38d → 45.33d | constraint start no earlier than 2021-06-14 08:00 → start no earlier than 2021-06-16 08:00; baseline start none → 2021-06-15 09:00; baseline finish none → 2021-06-15 10:00 |
| 45 | Совещание 17 | 2021-06-21 09:00 → 2021-06-23 09:00 (+2d) | 2021-06-21 10:00 → 2021-06-23 10:00 (+2d) |  | 39.38d → 40.33d | constraint start no earlier than 2021-06-21 08:00 → start no earlier than 2021-06-23 08:00; baseline start none → 2021-06-21 09:00; baseline finish none → 2021-06-21 10:00 |
| 46 | Совещание 18 | 2021-06-28 09:00 → 2021-06-30 09:00 (+2d) | 2021-06-28 10:00 → 2021-06-30 10:00 (+2d) |  | 34.38d → 35.33d | constraint start no earlier than 2021-06-28 08:00 → start no earlier than 2021-06-30 08:00; baseline start none → 2021-06-28 09:00; baseline finish none → 2021-06-28 10:00 |
| 47 | Совещание 19 | 2021-07-05 09:00 → 2021-07-07 09:00 (+2d) | 2021-07-05 10:00 → 2021-07-07 10:00 (+2d) |  | 29.38d → 30.33d | constraint start no earlier than 2021-07-05 08:00 → start no earlier than 2021-07-07 08:00; baseline start none → 2021-07-05 09:00; baseline finish none → 2021-07-05 10:00 |
| 48 | Совещание 20 | 2021-07-12 09:00 → 2021-07-14 09:00 (+2d) | 2021-07-12 10:00 → 2021-07-14 10:00 (+2d) |  | 24.38d → 25.33d | constraint start no earlier than 2021-07-12 08:00 → start no earlier than 2021-07-14 08:00; baseline start none → 2021-07-12 09:00; baseline finish none → 2021-07-12 10:00 |
| 49 | Совещание 21 | 2021-07-19 09:00 → 2021-07-21 09:00 (+2d) | 2021-07-19 10:00 → 2021-07-21 10:00 (+2d) |  | 19.38d → 20.33d | constraint start no earlier than 2021-07-19 08:00 → start no earlier than 2021-07-21 08:00; baseline start none → 2021-07-19 09:00; baseline finish none → 2021-07-19 10:00 |
| 50 | Совещание 22 | 2021-07-26 09:00 → 2021-07-28 09:00 (+2d) | 2021-07-26 10:00 → 2021-07-28 10:00 (+2d) |  | 14.38d → 15.33d | constraint start no earlier than 2021-07-26 08:00 → start no earlier than 2021-07-28 08:00; baseline start none → 2021-07-26 09:00; baseline finish none → 2021-07-26 10:00 |
| 51 | Совещание 23 | 2021-08-02 09:00 → 2021-08-04 09:00 (+2d) | 2021-08-02 10:00 → 2021-08-04 10:00 (+2d) |  | 9.38d → 10.33d | constraint start no earlier than 2021-08-02 08:00 → start no earlier than 2021-08-04 08:00; baseline start none → 2021-08-02 09:00; baseline finish none → 2021-08-02 10:00 |
| 52 | Совещание 24 | 2021-08-09 09:00 → 2021-08-11 09:00 (+2d) | 2021-08-09 10:00 → 2021-08-11 10:00 (+2d) |  | 4.38d → 5.33d | constraint start no earlier than 2021-08-09 08:00 → start no earlier than 2021-08-11 08:00; baseline start none → 2021-08-09 09:00; baseline finish none → 2021-08-09 10:00 |
