How a schedule from MS Project changed from version to version. A marks actual dates.

## Version 1 (data date 2021-02-27, saved 2021-03-06)

Note of the change: added variants 1

| ID | WBS | Task | Duration | Start | Finish | Predecessors | Total float | Constraint |
| --- | --- | --- | --- | --- | --- | --- | --- | --- |
| 1 |  | Начало проекта | 0w | 2021-03-01 08:00 | 2021-03-01 08:00 |  | 40.47d |  |
| 2 | 2 | **Создание интерфейса** | 80.97d | 2021-03-01 10:00 | 2021-06-28 09:44 | 1 | 0d |  |
| 3 | 2.1 | **Разработка дизайна интерфейса** | 25.62d | 2021-03-01 10:00 | 2021-04-06 16:00 |  | 40.34d |  |
| 4 |  | Разработка 2D графических элементов | 3w | 2021-03-01 10:00 | 2021-03-23 13:00 |  | 40.34d |  |
| 5 |  | Разработка 3D графичиских элементов | 2w | 2021-03-01 10:00 | 2021-03-16 12:00 | 4SS | 40.34d |  |
| 6 |  | Создание заставки | 3w | 2021-03-16 12:00 | 2021-04-06 16:00 | 5 | 40.34d |  |
| 7 |  | Программирование интерфейса | 3w | 2021-06-04 09:44 | 2021-06-28 09:44 | 3, 12 | 0d |  |
| 8 | 3 | **Построение базы объектов** | 85.25d | 2021-03-23 14:00 | 2021-07-23 16:00 |  | 5.42d |  |
| 9 |  | Анализ и построение структуры базы объектов | 2w | 2021-03-23 14:00 | 2021-04-06 16:00 |  | 5.42d |  |
| 10 |  | Программирование средств обработки базы объектов | 3w | 2021-04-06 16:00 | 2021-04-27 16:00 | 9 | 5.42d |  |
| 11 |  | Наполнение базы объектов | 12w | 2021-04-27 16:00 | 2021-07-23 16:00 | 10 | 5.42d |  |
| 12 | 4 | **Создание ядра GIS** | 65.97d | 2021-03-01 10:00 | 2021-06-04 09:44 |  | 0d |  |
| 13 |  | Анализ и проектирование ядра | 1w | 2021-03-01 10:00 | 2021-03-09 11:00 |  | 0d |  |
| 14 |  | Создание модели ядра | 2.07w | 2021-03-09 11:00 | 2021-03-23 14:49 | 13 | 0d |  |
| 15 |  | Тестирование модели ядра | 1w | 2021-03-23 14:49 | 2021-03-30 14:49 | 14 | 0d |  |
| 16 |  | Создание рабочей версии ядра | 9.1w | 2021-03-30 14:49 | 2021-06-04 09:44 | 15 | 0d |  |
| 17 |  | Создание мультимедиа - наполнения | 6w | 2021-04-06 16:00 | 2021-05-21 13:00 | 3 | 49.67d |  |
| 18 |  | Создание справочной системы | 2w | 2021-06-28 12:44 | 2021-07-22 11:44 | 7 | 6.83d |  |
| 19 | 7 | **Создание руководства пользователя** | 18.12d | 2021-06-11 09:44 | 2021-07-08 10:44 | 7FS-10d | 0d |  |
| 20 |  | Разработка дизайна руководства | 1w | 2021-06-11 09:44 | 2021-06-21 14:44 |  | 0d |  |
| 21 |  | Написание руководства пользователя | 3w | 2021-06-16 09:44 | 2021-07-08 10:44 | 20SS+2d | 0d |  |
| 22 | 8 | **Создание web - сайта и поддержка** | 24.88d | 2021-06-16 09:44 | 2021-07-20 17:44 |  | 0d |  |
| 23 |  | Разработка структуры сайта | 1d | 2021-06-16 09:44 | 2021-06-17 09:44 | 21SS | 0d |  |
| 24 |  | Разработка дизайна сайта | 1.4w | 2021-06-17 09:44 | 2021-06-28 16:44 | 23 | 0d |  |
| 25 |  | Наполнение сайта | 3w | 2021-06-28 16:44 | 2021-07-20 17:44 | 24 | 0d |  |
| 26 |  | Тестирование сайта | 2.59w | 2021-07-13 17:44 | 2021-08-02 10:23 | 22FS-1w | 0d |  |
| 27 |  | Сдача сайта в эксплуатацию | 0w | 2021-08-02 10:23 | 2021-08-02 10:23 | 26 | 0d |  |
| 28 | 11 | **Совещание** | 106.12d | 2021-03-01 09:00 | 2021-08-02 10:00 |  | 0.05d |  |
| 29 |  | Совещание 1 | 1h | 2021-03-01 09:00 | 2021-03-01 10:00 |  | 106.05d | start no earlier than 2021-03-01 08:00 |
| 30 |  | Совещание 2 | 1h | 2021-03-09 09:00 | 2021-03-09 10:00 |  | 101.05d | start no earlier than 2021-03-08 08:00 |
| 31 |  | Совещание 3 | 1h | 2021-03-15 09:00 | 2021-03-15 10:00 |  | 97.05d | start no earlier than 2021-03-15 08:00 |
| 32 |  | Совещание 4 | 1h | 2021-03-22 09:00 | 2021-03-22 10:00 |  | 92.05d | start no earlier than 2021-03-22 08:00 |
| 33 |  | Совещание 5 | 1h | 2021-03-29 09:00 | 2021-03-29 10:00 |  | 87.05d | start no earlier than 2021-03-29 08:00 |
| 34 |  | Совещание 6 | 1h | 2021-04-05 09:00 | 2021-04-05 10:00 |  | 82.05d | start no earlier than 2021-04-05 08:00 |
| 35 |  | Совещание 7 | 1h | 2021-04-12 09:00 | 2021-04-12 10:00 |  | 77.05d | start no earlier than 2021-04-12 08:00 |
| 36 |  | Совещание 8 | 1h | 2021-04-19 09:00 | 2021-04-19 10:00 |  | 72.05d | start no earlier than 2021-04-19 08:00 |
| 37 |  | Совещание 9 | 1h | 2021-04-26 09:00 | 2021-04-26 10:00 |  | 67.05d | start no earlier than 2021-04-26 08:00 |
| 38 |  | Совещание 10 | 1h | 2021-05-04 09:00 | 2021-05-04 10:00 |  | 62.05d | start no earlier than 2021-05-03 08:00 |
| 39 |  | Совещание 11 | 1h | 2021-05-11 09:00 | 2021-05-11 10:00 |  | 58.05d | start no earlier than 2021-05-10 08:00 |
| 40 |  | Совещание 12 | 1h | 2021-05-17 09:00 | 2021-05-17 10:00 |  | 54.05d | start no earlier than 2021-05-17 08:00 |
| 41 |  | Совещание 13 | 1h | 2021-05-24 09:00 | 2021-05-24 10:00 |  | 49.05d | start no earlier than 2021-05-24 08:00 |
| 42 |  | Совещание 14 | 1h | 2021-05-31 09:00 | 2021-05-31 10:00 |  | 44.05d | start no earlier than 2021-05-31 08:00 |
| 43 |  | Совещание 15 | 1h | 2021-06-07 09:00 | 2021-06-07 10:00 |  | 39.05d | start no earlier than 2021-06-07 08:00 |
| 44 |  | Совещание 16 | 1h | 2021-06-15 09:00 | 2021-06-15 10:00 |  | 34.05d | start no earlier than 2021-06-14 08:00 |
| 45 |  | Совещание 17 | 1h | 2021-06-21 09:00 | 2021-06-21 10:00 |  | 30.05d | start no earlier than 2021-06-21 08:00 |
| 46 |  | Совещание 18 | 1h | 2021-06-28 09:00 | 2021-06-28 10:00 |  | 25.05d | start no earlier than 2021-06-28 08:00 |
| 47 |  | Совещание 19 | 1h | 2021-07-05 09:00 | 2021-07-05 10:00 |  | 20.05d | start no earlier than 2021-07-05 08:00 |
| 48 |  | Совещание 20 | 1h | 2021-07-12 09:00 | 2021-07-12 10:00 |  | 15.05d | start no earlier than 2021-07-12 08:00 |
| 49 |  | Совещание 21 | 1h | 2021-07-19 09:00 | 2021-07-19 10:00 |  | 10.05d | start no earlier than 2021-07-19 08:00 |
| 50 |  | Совещание 22 | 1h | 2021-07-26 09:00 | 2021-07-26 10:00 |  | 5.05d | start no earlier than 2021-07-26 08:00 |
| 51 |  | Совещание 23 | 1h | 2021-08-02 09:00 | 2021-08-02 10:00 |  | 0.05d | start no earlier than 2021-08-02 08:00 |

## Version 2 (data date 2021-02-27, saved 2021-03-09)

Note of the change: added lab4 and lab5(task)

Last finish 2021-08-02 → 2021-07-13 (-20d).

Removed: 48 Совещание 20; 49 Совещание 21; 50 Совещание 22; 51 Совещание 23

Changed:

| ID | Task | Start | Finish | Duration | Total float | Other |
| --- | --- | --- | --- | --- | --- | --- |
| 2 | **Создание интерфейса** | 2021-03-01 10:00 → 2021-03-01 09:00 | 2021-06-28 09:44 → 2021-06-08 11:55 (-20d) | 80.97d → 68.36d |  | baseline start 2021-03-01 10:00 → 2021-03-01 09:00; baseline finish 2021-06-28 09:44 → 2021-06-08 11:55 |
| 3 | **Разработка дизайна интерфейса** | 2021-03-01 10:00 → 2021-03-01 09:00 | 2021-04-06 16:00 → 2021-04-06 15:00 |  | 40.34d → 35.24d | baseline start 2021-03-01 10:00 → 2021-03-01 09:00; baseline finish 2021-04-06 16:00 → 2021-04-06 15:00 |
| 4 | Разработка 2D графических элементов | 2021-03-01 10:00 → 2021-03-01 09:00 | 2021-03-23 13:00 → 2021-03-23 12:00 |  | 40.34d → 35.24d | baseline start 2021-03-01 10:00 → 2021-03-01 09:00; baseline finish 2021-03-23 13:00 → 2021-03-23 12:00 |
| 5 | Разработка 3D графичиских элементов | 2021-03-01 10:00 → 2021-03-01 09:00 | 2021-03-16 12:00 → 2021-03-16 11:00 |  | 40.34d → 35.24d | baseline start 2021-03-01 10:00 → 2021-03-01 09:00; baseline finish 2021-03-16 12:00 → 2021-03-16 11:00 |
| 6 | Создание заставки | 2021-03-16 12:00 → 2021-03-16 11:00 | 2021-04-06 16:00 → 2021-04-06 15:00 |  | 40.34d → 35.24d | baseline start 2021-03-16 12:00 → 2021-03-16 11:00; baseline finish 2021-04-06 16:00 → 2021-04-06 15:00 |
| 7 | Программирование интерфейса | 2021-06-04 09:44 → 2021-05-27 16:55 (-8d) | 2021-06-28 09:44 → 2021-06-08 11:55 (-20d) | 3w → 1.5w |  | resources Программист#3; Программист#4 → Программист#3; Программист#4; Программист#1; Программист#2; baseline start 2021-06-04 09:44 → 2021-05-27 16:55; baseline finish 2021-06-28 09:44 → 2021-06-08 11:55 |
| 8 | **Построение базы объектов** | 2021-03-23 14:00 → 2021-03-09 10:00 (-14d) | 2021-07-23 16:00 → 2021-07-09 12:00 (-14d) |  | 5.42d → 1.8d | baseline start 2021-03-23 14:00 → 2021-03-09 10:00; baseline finish 2021-07-23 16:00 → 2021-07-09 12:00 |
| 9 | Анализ и построение структуры базы объектов | 2021-03-23 14:00 → 2021-03-09 10:00 (-14d) | 2021-04-06 16:00 → 2021-03-23 12:00 (-14d) |  | 5.42d → 1.8d | baseline start 2021-03-23 14:00 → 2021-03-09 10:00; baseline finish 2021-04-06 16:00 → 2021-03-23 12:00 |
| 10 | Программирование средств обработки базы объектов | 2021-04-06 16:00 → 2021-03-23 12:00 (-14d) | 2021-04-27 16:00 → 2021-04-13 12:00 (-14d) |  | 5.42d → 1.8d | baseline start 2021-04-06 16:00 → 2021-03-23 12:00; baseline finish 2021-04-27 16:00 → 2021-04-13 12:00 |
| 11 | Наполнение базы объектов | 2021-04-27 16:00 → 2021-04-13 12:00 (-14d) | 2021-07-23 16:00 → 2021-07-09 12:00 (-14d) |  | 5.42d → 1.8d | baseline start 2021-04-27 16:00 → 2021-04-13 12:00; baseline finish 2021-07-23 16:00 → 2021-07-09 12:00 |
| 12 | **Создание ядра GIS** | 2021-03-01 10:00 → 2021-03-01 09:00 | 2021-06-04 09:44 → 2021-05-27 16:55 (-8d) | 65.97d → 60.86d |  | baseline start 2021-03-01 10:00 → 2021-03-01 09:00; baseline finish 2021-06-04 09:44 → 2021-05-27 16:55 |
| 13 | Анализ и проектирование ядра | 2021-03-01 10:00 → 2021-03-01 09:00 | 2021-03-09 11:00 → 2021-03-09 10:00 | 1w → 1.02w |  | baseline start 2021-03-01 10:00 → 2021-03-01 09:00; baseline finish 2021-03-09 11:00 → 2021-03-09 10:00 |
| 14 | Создание модели ядра | 2021-03-09 11:00 → 2021-03-09 10:00 | 2021-03-23 14:49 → 2021-03-23 10:49 | 2.07w → 2.02w |  | baseline start 2021-03-09 11:00 → 2021-03-09 10:00; baseline finish 2021-03-23 14:49 → 2021-03-23 10:49 |
| 15 | Тестирование модели ядра | 2021-03-23 14:49 → 2021-03-23 10:49 | 2021-03-30 14:49 → 2021-03-30 10:49 |  |  | baseline start 2021-03-23 14:49 → 2021-03-23 10:49; baseline finish 2021-03-30 14:49 → 2021-03-30 10:49 |
| 16 | Создание рабочей версии ядра | 2021-03-30 14:49 → 2021-03-30 10:49 | 2021-06-04 09:44 → 2021-05-27 16:55 (-8d) | 9.1w → 8.13w |  | baseline start 2021-03-30 14:49 → 2021-03-30 10:49; baseline finish 2021-06-04 09:44 → 2021-05-27 16:55 |
| 17 | Создание мультимедиа - наполнения | 2021-04-06 16:00 → 2021-04-06 15:00 |  |  | 49.67d → 35.68d | baseline start 2021-04-06 16:00 → 2021-04-06 15:00 |
| 18 | Создание справочной системы | 2021-06-28 12:44 → 2021-06-21 10:55 (-7d) | 2021-07-22 11:44 → 2021-07-06 09:50 (-16d) |  | 6.83d → 5.07d | baseline start 2021-07-12 10:00 → 2021-06-21 10:55; baseline finish 2021-07-26 12:00 → 2021-07-06 09:50 |
| 19 | **Создание руководства пользователя** | 2021-06-11 09:44 → 2021-05-25 11:55 (-17d) | 2021-07-08 10:44 → 2021-06-21 10:55 (-17d) | 18.12d → 17.88d |  | baseline start 2021-06-11 09:44 → 2021-05-25 11:55; baseline finish 2021-07-08 10:44 → 2021-06-21 10:55 |
| 20 | Разработка дизайна руководства | 2021-06-11 09:44 → 2021-05-25 11:55 (-17d) | 2021-06-21 14:44 → 2021-06-01 14:55 (-20d) |  |  | baseline start 2021-06-11 09:44 → 2021-05-25 11:55; baseline finish 2021-06-21 14:44 → 2021-06-01 14:55 |
| 21 | Написание руководства пользователя | 2021-06-16 09:44 → 2021-05-27 11:55 (-20d) | 2021-07-08 10:44 → 2021-06-21 10:55 (-17d) |  |  | baseline start 2021-06-16 09:44 → 2021-05-27 11:55; baseline finish 2021-07-08 10:44 → 2021-06-21 10:55 |
| 22 | **Создание web - сайта и поддержка** | 2021-06-16 09:44 → 2021-05-27 11:55 (-20d) | 2021-07-20 17:44 → 2021-07-01 15:55 (-19d) | 24.88d → 24.38d |  | baseline start 2021-06-16 09:44 → 2021-05-27 11:55; baseline finish 2021-07-20 17:44 → 2021-07-01 15:55 |
| 23 | Разработка структуры сайта | 2021-06-16 09:44 → 2021-05-27 11:55 (-20d) | 2021-06-17 09:44 → 2021-05-28 11:55 (-20d) |  |  | baseline start 2021-06-16 09:44 → 2021-05-27 11:55; baseline finish 2021-06-17 09:44 → 2021-05-28 11:55 |
| 24 | Разработка дизайна сайта | 2021-06-17 09:44 → 2021-05-28 11:55 (-20d) | 2021-06-28 16:44 → 2021-06-08 16:55 (-20d) | 1.4w → 1.45w |  | baseline start 2021-06-17 09:44 → 2021-05-28 11:55; baseline finish 2021-06-28 16:44 → 2021-06-08 16:55 |
| 25 | Наполнение сайта | 2021-06-28 16:44 → 2021-06-08 16:55 (-20d) | 2021-07-20 17:44 → 2021-07-01 15:55 (-19d) |  |  | baseline start 2021-06-28 16:44 → 2021-06-08 16:55; baseline finish 2021-07-20 17:44 → 2021-07-01 15:55 |
| 26 | Тестирование сайта | 2021-07-13 17:44 → 2021-06-24 15:55 (-19d) | 2021-08-02 10:23 → 2021-07-13 10:25 (-20d) | 2.59w → 2.49w |  | baseline start 2021-07-13 17:44 → 2021-06-24 15:55; baseline finish 2021-08-02 10:23 → 2021-07-13 10:25 |
| 27 | Сдача сайта в эксплуатацию | 2021-08-02 10:23 → 2021-07-13 10:25 (-20d) | 2021-08-02 10:23 → 2021-07-13 10:25 (-20d) |  |  | baseline start 2021-08-02 10:23 → 2021-07-13 10:25; baseline finish 2021-08-02 10:23 → 2021-07-13 10:25 |
| 28 | **Совещание** | 2021-03-01 09:00 → 2021-03-03 09:00 (+2d) | 2021-08-02 10:00 → 2021-07-07 10:00 (-26d) | 106.12d → 86.12d | 0.05d → 4.05d | baseline start 2021-03-01 09:00 → 2021-03-03 09:00; baseline finish 2021-08-02 10:00 → 2021-07-07 10:00 |
| 29 | Совещание 1 | 2021-03-01 09:00 → 2021-03-03 09:00 (+2d) | 2021-03-01 10:00 → 2021-03-03 10:00 (+2d) |  | 106.05d → 90.05d | constraint start no earlier than 2021-03-01 08:00 → start no earlier than 2021-03-03 08:00; baseline start 2021-03-01 09:00 → 2021-03-03 09:00; baseline finish 2021-03-01 10:00 → 2021-03-03 10:00 |
| 30 | Совещание 2 | 2021-03-09 09:00 → 2021-03-10 09:00 (+1d) | 2021-03-09 10:00 → 2021-03-10 10:00 (+1d) |  | 101.05d → 86.05d | constraint start no earlier than 2021-03-08 08:00 → start no earlier than 2021-03-10 08:00; baseline start 2021-03-09 09:00 → 2021-03-10 09:00; baseline finish 2021-03-09 10:00 → 2021-03-10 10:00 |
| 31 | Совещание 3 | 2021-03-15 09:00 → 2021-03-17 09:00 (+2d) | 2021-03-15 10:00 → 2021-03-17 10:00 (+2d) |  | 97.05d → 81.05d | constraint start no earlier than 2021-03-15 08:00 → start no earlier than 2021-03-17 08:00; baseline start 2021-03-15 09:00 → 2021-03-17 09:00; baseline finish 2021-03-15 10:00 → 2021-03-17 10:00 |
| 32 | Совещание 4 | 2021-03-22 09:00 → 2021-03-24 09:00 (+2d) | 2021-03-22 10:00 → 2021-03-24 10:00 (+2d) |  | 92.05d → 76.05d | constraint start no earlier than 2021-03-22 08:00 → start no earlier than 2021-03-24 08:00; baseline start 2021-03-22 09:00 → 2021-03-24 09:00; baseline finish 2021-03-22 10:00 → 2021-03-24 10:00 |
| 33 | Совещание 5 | 2021-03-29 09:00 → 2021-03-31 09:00 (+2d) | 2021-03-29 10:00 → 2021-03-31 10:00 (+2d) |  | 87.05d → 71.05d | constraint start no earlier than 2021-03-29 08:00 → start no earlier than 2021-03-31 08:00; baseline start 2021-03-29 09:00 → 2021-03-31 09:00; baseline finish 2021-03-29 10:00 → 2021-03-31 10:00 |
| 34 | Совещание 6 | 2021-04-05 09:00 → 2021-04-07 09:00 (+2d) | 2021-04-05 10:00 → 2021-04-07 10:00 (+2d) |  | 82.05d → 66.05d | constraint start no earlier than 2021-04-05 08:00 → start no earlier than 2021-04-07 08:00; baseline start 2021-04-05 09:00 → 2021-04-07 09:00; baseline finish 2021-04-05 10:00 → 2021-04-07 10:00 |
| 35 | Совещание 7 | 2021-04-12 09:00 → 2021-04-14 09:00 (+2d) | 2021-04-12 10:00 → 2021-04-14 10:00 (+2d) |  | 77.05d → 61.05d | constraint start no earlier than 2021-04-12 08:00 → start no earlier than 2021-04-14 08:00; baseline start 2021-04-12 09:00 → 2021-04-14 09:00; baseline finish 2021-04-12 10:00 → 2021-04-14 10:00 |
| 36 | Совещание 8 | 2021-04-19 09:00 → 2021-04-21 09:00 (+2d) | 2021-04-19 10:00 → 2021-04-21 10:00 (+2d) |  | 72.05d → 56.05d | constraint start no earlier than 2021-04-19 08:00 → start no earlier than 2021-04-21 08:00; baseline start 2021-04-19 09:00 → 2021-04-21 09:00; baseline finish 2021-04-19 10:00 → 2021-04-21 10:00 |
| 37 | Совещание 9 | 2021-04-26 09:00 → 2021-04-28 09:00 (+2d) | 2021-04-26 10:00 → 2021-04-28 10:00 (+2d) |  | 67.05d → 51.05d | constraint start no earlier than 2021-04-26 08:00 → start no earlier than 2021-04-28 08:00; baseline start 2021-04-26 09:00 → 2021-04-28 09:00; baseline finish 2021-04-26 10:00 → 2021-04-28 10:00 |
| 38 | Совещание 10 | 2021-05-04 09:00 → 2021-05-05 09:00 (+1d) | 2021-05-04 10:00 → 2021-05-05 10:00 (+1d) |  | 62.05d → 47.05d | constraint start no earlier than 2021-05-03 08:00 → start no earlier than 2021-05-05 08:00; baseline start 2021-05-04 09:00 → 2021-05-05 09:00; baseline finish 2021-05-04 10:00 → 2021-05-05 10:00 |
| 39 | Совещание 11 | 2021-05-11 09:00 → 2021-05-12 09:00 (+1d) | 2021-05-11 10:00 → 2021-05-12 10:00 (+1d) |  | 58.05d → 43.05d | constraint start no earlier than 2021-05-10 08:00 → start no earlier than 2021-05-12 08:00; baseline start 2021-05-11 09:00 → 2021-05-12 09:00; baseline finish 2021-05-11 10:00 → 2021-05-12 10:00 |
| 40 | Совещание 12 | 2021-05-17 09:00 → 2021-05-19 09:00 (+2d) | 2021-05-17 10:00 → 2021-05-19 10:00 (+2d) |  | 54.05d → 38.05d | constraint start no earlier than 2021-05-17 08:00 → start no earlier than 2021-05-19 08:00; baseline start 2021-05-17 09:00 → 2021-05-19 09:00; baseline finish 2021-05-17 10:00 → 2021-05-19 10:00 |
| 41 | Совещание 13 | 2021-05-24 09:00 → 2021-05-26 09:00 (+2d) | 2021-05-24 10:00 → 2021-05-26 10:00 (+2d) |  | 49.05d → 33.05d | constraint start no earlier than 2021-05-24 08:00 → start no earlier than 2021-05-26 08:00; baseline start 2021-05-24 09:00 → 2021-05-26 09:00; baseline finish 2021-05-24 10:00 → 2021-05-26 10:00 |
| 42 | Совещание 14 | 2021-05-31 09:00 → 2021-06-02 09:00 (+2d) | 2021-05-31 10:00 → 2021-06-02 10:00 (+2d) |  | 44.05d → 28.05d | constraint start no earlier than 2021-05-31 08:00 → start no earlier than 2021-06-02 08:00; baseline start 2021-05-31 09:00 → 2021-06-02 09:00; baseline finish 2021-05-31 10:00 → 2021-06-02 10:00 |
| 43 | Совещание 15 | 2021-06-07 09:00 → 2021-06-09 09:00 (+2d) | 2021-06-07 10:00 → 2021-06-09 10:00 (+2d) |  | 39.05d → 23.05d | constraint start no earlier than 2021-06-07 08:00 → start no earlier than 2021-06-09 08:00; baseline start 2021-06-07 09:00 → 2021-06-09 09:00; baseline finish 2021-06-07 10:00 → 2021-06-09 10:00 |
| 44 | Совещание 16 | 2021-06-15 09:00 → 2021-06-16 09:00 (+1d) | 2021-06-15 10:00 → 2021-06-16 10:00 (+1d) |  | 34.05d → 19.05d | constraint start no earlier than 2021-06-14 08:00 → start no earlier than 2021-06-16 08:00; baseline start 2021-06-15 09:00 → 2021-06-16 09:00; baseline finish 2021-06-15 10:00 → 2021-06-16 10:00 |
| 45 | Совещание 17 | 2021-06-21 09:00 → 2021-06-23 09:00 (+2d) | 2021-06-21 10:00 → 2021-06-23 10:00 (+2d) |  | 30.05d → 14.05d | constraint start no earlier than 2021-06-21 08:00 → start no earlier than 2021-06-23 08:00; baseline start 2021-06-21 09:00 → 2021-06-23 09:00; baseline finish 2021-06-21 10:00 → 2021-06-23 10:00 |
| 46 | Совещание 18 | 2021-06-28 09:00 → 2021-06-30 09:00 (+2d) | 2021-06-28 10:00 → 2021-06-30 10:00 (+2d) |  | 25.05d → 9.05d | constraint start no earlier than 2021-06-28 08:00 → start no earlier than 2021-06-30 08:00; baseline start 2021-06-28 09:00 → 2021-06-30 09:00; baseline finish 2021-06-28 10:00 → 2021-06-30 10:00 |
| 47 | Совещание 19 | 2021-07-05 09:00 → 2021-07-07 09:00 (+2d) | 2021-07-05 10:00 → 2021-07-07 10:00 (+2d) |  | 20.05d → 4.05d | constraint start no earlier than 2021-07-05 08:00 → start no earlier than 2021-07-07 08:00; baseline start 2021-07-05 09:00 → 2021-07-07 09:00; baseline finish 2021-07-05 10:00 → 2021-07-07 10:00 |
