How a schedule from MS Project changed from version to version. A marks actual dates.

## Version 1 (data date 2021-02-27, saved 2021-03-11, file lab3_3_fixv2.mpp)

Note of the change: lab4 report done

| ID | WBS | Task | Duration | Start | Finish | Predecessors | Total float | Constraint |
| --- | --- | --- | --- | --- | --- | --- | --- | --- |
| 1 |  | Начало проекта | 0w | 2021-03-01 08:00 | 2021-03-01 08:00 |  | 35.24d |  |
| 2 | 2 | **Создание интерфейса** | 75.86d | 2021-03-01 09:00 | 2021-06-18 16:55 | 1 | 0d |  |
| 3 | 2.1 | **Разработка дизайна интерфейса** | 25.62d | 2021-03-01 09:00 | 2021-04-06 15:00 |  | 35.24d |  |
| 4 |  | Разработка 2D графических элементов | 3w | 2021-03-01 09:00 | 2021-03-23 12:00 |  | 35.24d |  |
| 5 |  | Разработка 3D графичиских элементов | 2w | 2021-03-01 09:00 | 2021-03-16 11:00 | 4SS | 35.24d |  |
| 6 |  | Создание заставки | 3w | 2021-03-16 11:00 | 2021-04-06 15:00 | 5 | 35.24d |  |
| 7 |  | Программирование интерфейса | 3w | 2021-05-27 16:55 | 2021-06-18 16:55 | 3, 12 | 0d |  |
| 8 | 3 | **Построение базы объектов** | 85.25d | 2021-03-09 10:00 | 2021-07-09 12:00 |  | 8.71d |  |
| 9 |  | Анализ и построение структуры базы объектов | 2w | 2021-03-09 10:00 | 2021-03-23 12:00 |  | 8.71d |  |
| 10 |  | Программирование средств обработки базы объектов | 3w | 2021-03-23 12:00 | 2021-04-13 12:00 | 9 | 8.71d |  |
| 11 |  | Наполнение базы объектов | 12w | 2021-04-13 12:00 | 2021-07-09 12:00 | 10 | 8.71d |  |
| 12 | 4 | **Создание ядра GIS** | 60.86d | 2021-03-01 09:00 | 2021-05-27 16:55 |  | 0d |  |
| 13 |  | Анализ и проектирование ядра | 1.02w | 2021-03-01 09:00 | 2021-03-09 10:00 |  | 0d |  |
| 14 |  | Создание модели ядра | 2.02w | 2021-03-09 10:00 | 2021-03-23 10:49 | 13 | 0d |  |
| 15 |  | Тестирование модели ядра | 1w | 2021-03-23 10:49 | 2021-03-30 10:49 | 14 | 0d |  |
| 16 |  | Создание рабочей версии ядра | 8.13w | 2021-03-30 10:49 | 2021-05-27 16:55 | 15 | 0d |  |
| 17 |  | Создание мультимедиа - наполнения | 6w | 2021-04-06 15:00 | 2021-05-21 13:00 | 3 | 42.58d |  |
| 18 |  | Создание справочной системы | 2w | 2021-06-30 11:55 | 2021-07-14 14:55 | 7 | 5.47d |  |
| 19 | 7 | **Создание руководства пользователя** | 17.5d | 2021-06-03 16:55 | 2021-06-30 11:55 | 7FS-10d | 0d |  |
| 20 |  | Разработка дизайна руководства | 1w | 2021-06-03 16:55 | 2021-06-10 17:55 |  | 0d |  |
| 21 |  | Написание руководства пользователя | 3w | 2021-06-07 16:55 | 2021-06-30 11:55 | 20SS+2d | 0d |  |
| 22 | 8 | **Создание web - сайта и поддержка** | 23.62d | 2021-06-07 16:55 | 2021-07-12 12:55 |  | 0d |  |
| 23 |  | Разработка структуры сайта | 1d | 2021-06-07 16:55 | 2021-06-08 16:55 | 21SS | 0d |  |
| 24 |  | Разработка дизайна сайта | 1.4w | 2021-06-08 16:55 | 2021-06-21 09:55 | 23 | 0d |  |
| 25 |  | Наполнение сайта | 3w | 2021-06-21 09:55 | 2021-07-12 12:55 | 24 | 0d |  |
| 26 |  | Тестирование сайта | 2.52w | 2021-07-05 12:55 | 2021-07-22 09:39 | 22FS-1w | 0d |  |
| 27 |  | Сдача сайта в эксплуатацию | 0w | 2021-07-22 09:39 | 2021-07-22 09:39 | 26 | 0d |  |
| 28 | 11 | **Совещание** | 96.12d | 2021-03-03 09:00 | 2021-07-21 10:00 |  | 0.96d |  |
| 29 |  | Совещание 1 | 1h | 2021-03-03 09:00 | 2021-03-03 10:00 |  | 96.96d | start no earlier than 2021-03-03 08:00 |
| 30 |  | Совещание 2 | 1h | 2021-03-10 09:00 | 2021-03-10 10:00 |  | 92.96d | start no earlier than 2021-03-10 08:00 |
| 31 |  | Совещание 3 | 1h | 2021-03-17 09:00 | 2021-03-17 10:00 |  | 87.96d | start no earlier than 2021-03-17 08:00 |
| 32 |  | Совещание 4 | 1h | 2021-03-24 09:00 | 2021-03-24 10:00 |  | 82.96d | start no earlier than 2021-03-24 08:00 |
| 33 |  | Совещание 5 | 1h | 2021-03-31 09:00 | 2021-03-31 10:00 |  | 77.96d | start no earlier than 2021-03-31 08:00 |
| 34 |  | Совещание 6 | 1h | 2021-04-07 09:00 | 2021-04-07 10:00 |  | 72.96d | start no earlier than 2021-04-07 08:00 |
| 35 |  | Совещание 7 | 1h | 2021-04-14 09:00 | 2021-04-14 10:00 |  | 67.96d | start no earlier than 2021-04-14 08:00 |
| 36 |  | Совещание 8 | 1h | 2021-04-21 09:00 | 2021-04-21 10:00 |  | 62.96d | start no earlier than 2021-04-21 08:00 |
| 37 |  | Совещание 9 | 1h | 2021-04-28 09:00 | 2021-04-28 10:00 |  | 57.96d | start no earlier than 2021-04-28 08:00 |
| 38 |  | Совещание 10 | 1h | 2021-05-05 09:00 | 2021-05-05 10:00 |  | 53.96d | start no earlier than 2021-05-05 08:00 |
| 39 |  | Совещание 11 | 1h | 2021-05-12 09:00 | 2021-05-12 10:00 |  | 49.96d | start no earlier than 2021-05-12 08:00 |
| 40 |  | Совещание 12 | 1h | 2021-05-19 09:00 | 2021-05-19 10:00 |  | 44.96d | start no earlier than 2021-05-19 08:00 |
| 41 |  | Совещание 13 | 1h | 2021-05-26 09:00 | 2021-05-26 10:00 |  | 39.96d | start no earlier than 2021-05-26 08:00 |
| 42 |  | Совещание 14 | 1h | 2021-06-02 09:00 | 2021-06-02 10:00 |  | 34.96d | start no earlier than 2021-06-02 08:00 |
| 43 |  | Совещание 15 | 1h | 2021-06-09 09:00 | 2021-06-09 10:00 |  | 29.96d | start no earlier than 2021-06-09 08:00 |
| 44 |  | Совещание 16 | 1h | 2021-06-16 09:00 | 2021-06-16 10:00 |  | 25.96d | start no earlier than 2021-06-16 08:00 |
| 45 |  | Совещание 17 | 1h | 2021-06-23 09:00 | 2021-06-23 10:00 |  | 20.96d | start no earlier than 2021-06-23 08:00 |
| 46 |  | Совещание 18 | 1h | 2021-06-30 09:00 | 2021-06-30 10:00 |  | 15.96d | start no earlier than 2021-06-30 08:00 |
| 47 |  | Совещание 19 | 1h | 2021-07-07 09:00 | 2021-07-07 10:00 |  | 10.96d | start no earlier than 2021-07-07 08:00 |
| 48 |  | Совещание 20 | 1h | 2021-07-14 09:00 | 2021-07-14 10:00 |  | 5.96d | start no earlier than 2021-07-14 08:00 |
| 49 |  | Совещание 21 | 1h | 2021-07-21 09:00 | 2021-07-21 10:00 |  | 0.96d | start no earlier than 2021-07-21 08:00 |

## Version 2 (data date 2021-04-14, saved 2021-03-20, file lab3_3_fixv2 финал(бумага).mpp)

Note of the change: lab4 report done

Last finish 2021-07-22 → 2021-07-29 (+7d). Complete tasks 0 → 13.

Changed:

| ID | Task | Start | Finish | Duration | Complete | Total float | Other |
| --- | --- | --- | --- | --- | --- | --- | --- |
| 1 | Начало проекта | 2021-03-01 08:00 A | 2021-03-01 08:00 A |  | 0% → 100% | 35.24d → none |  |
| 2 | **Создание интерфейса** | 2021-03-01 09:00 A | 2021-06-18 16:55 → 2021-06-25 15:05 (+7d) | 75.86d → 80.64d | 0% → 73% |  |  |
| 3 | **Разработка дизайна интерфейса** | 2021-03-01 09:00 A | 2021-04-06 15:00 → 2021-04-13 16:00 A (+7d) | 25.62d → 30.75d | 0% → 100% | 35.24d → none |  |
| 4 | Разработка 2D графических элементов | 2021-03-01 09:00 A | 2021-03-23 12:00 A |  | 0% → 100% | 35.24d → none |  |
| 5 | Разработка 3D графичиских элементов | 2021-03-01 09:00 → 2021-03-08 08:00 A (+7d) | 2021-03-16 11:00 → 2021-03-23 12:00 A (+7d) |  | 0% → 100% | 35.24d → none |  |
| 6 | Создание заставки | 2021-03-16 11:00 → 2021-03-23 12:00 A (+7d) | 2021-04-06 15:00 → 2021-04-13 16:00 A (+7d) |  | 0% → 100% | 35.24d → none |  |
| 7 | Программирование интерфейса | 2021-05-27 16:55 → 2021-06-03 15:05 (+7d) | 2021-06-18 16:55 → 2021-06-25 15:05 (+7d) |  |  |  |  |
| 8 | **Построение базы объектов** | 2021-03-09 10:00 A |  |  | 0% → 26% | 8.71d → 13.71d |  |
| 9 | Анализ и построение структуры базы объектов | 2021-03-09 10:00 A | 2021-03-23 12:00 A |  | 0% → 100% | 8.71d → none |  |
| 10 | Программирование средств обработки базы объектов | 2021-03-23 12:00 A |  |  | 0% → 80% | 8.71d → 0d |  |
| 11 | Наполнение базы объектов | 2021-04-13 12:00 A |  |  |  | 8.71d → 13.71d |  |
| 12 | **Создание ядра GIS** | 2021-03-01 09:00 A | 2021-05-27 16:55 → 2021-06-03 15:05 (+7d) | 60.86d → 65.64d | 0% → 38% |  |  |
| 13 | Анализ и проектирование ядра | 2021-03-01 09:00 A | 2021-03-09 10:00 A |  | 0% → 100% | 0d → none |  |
| 14 | Создание модели ядра | 2021-03-09 10:00 A | 2021-03-23 10:49 A |  | 0% → 100% | 0d → none |  |
| 15 | Тестирование модели ядра | 2021-03-23 10:49 A | 2021-03-30 10:49 → 2021-04-05 18:00 A (+6d) | 1w → 1.95w | 0% → 100% | 0d → none |  |
| 16 | Создание рабочей версии ядра | 2021-03-30 10:49 → 2021-04-06 09:00 A (+7d) | 2021-05-27 16:55 → 2021-06-03 15:05 (+7d) |  |  |  |  |
| 17 | Создание мультимедиа - наполнения | 2021-04-06 15:00 → 2021-04-13 16:00 A (+7d) | 2021-05-21 13:00 → 2021-05-28 17:00 (+7d) |  |  | 42.58d → 42.21d |  |
| 18 | Создание справочной системы | 2021-06-30 11:55 → 2021-07-07 11:55 (+7d) | 2021-07-14 14:55 → 2021-07-21 14:55 (+7d) |  |  |  |  |
| 19 | **Создание руководства пользователя** | 2021-06-03 16:55 → 2021-06-10 15:05 (+7d) | 2021-06-30 11:55 → 2021-07-07 11:55 (+7d) | 17.5d → 17.73d |  |  |  |
| 20 | Разработка дизайна руководства | 2021-06-03 16:55 → 2021-06-10 15:05 (+7d) | 2021-06-10 17:55 → 2021-06-18 16:05 (+8d) |  |  |  |  |
| 21 | Написание руководства пользователя | 2021-06-07 16:55 → 2021-06-15 15:05 (+8d) | 2021-06-30 11:55 → 2021-07-07 11:55 (+7d) |  |  |  |  |
| 22 | **Создание web - сайта и поддержка** | 2021-06-07 16:55 → 2021-06-15 15:05 (+8d) | 2021-07-12 12:55 → 2021-07-19 12:55 (+7d) | 23.62d → 23.85d |  |  |  |
| 23 | Разработка структуры сайта | 2021-06-07 16:55 → 2021-06-15 15:05 (+8d) | 2021-06-08 16:55 → 2021-06-16 15:05 (+8d) |  |  |  |  |
| 24 | Разработка дизайна сайта | 2021-06-08 16:55 → 2021-06-16 15:05 (+8d) | 2021-06-21 09:55 → 2021-06-28 09:05 (+7d) |  |  |  |  |
| 25 | Наполнение сайта | 2021-06-21 09:55 → 2021-06-28 09:05 (+7d) | 2021-07-12 12:55 → 2021-07-19 12:55 (+7d) |  |  |  |  |
| 26 | Тестирование сайта | 2021-07-05 12:55 → 2021-07-12 12:55 (+7d) | 2021-07-22 09:39 → 2021-07-29 09:39 (+7d) |  |  |  |  |
| 27 | Сдача сайта в эксплуатацию | 2021-07-22 09:39 → 2021-07-29 09:39 (+7d) | 2021-07-22 09:39 → 2021-07-29 09:39 (+7d) |  |  |  |  |
| 28 | **Совещание** | 2021-03-03 09:00 A |  |  | 0% → 33% | 0.96d → 5.96d | resources none → Проектор [1 шт] |
| 29 | Совещание 1 | 2021-03-03 09:00 A | 2021-03-03 10:00 A |  | 0% → 100% | 96.96d → none |  |
| 30 | Совещание 2 | 2021-03-10 09:00 A | 2021-03-10 10:00 A |  | 0% → 100% | 92.96d → none |  |
| 31 | Совещание 3 | 2021-03-17 09:00 A | 2021-03-17 10:00 A |  | 0% → 100% | 87.96d → none |  |
| 32 | Совещание 4 | 2021-03-24 09:00 A | 2021-03-24 10:00 A |  | 0% → 100% | 82.96d → none |  |
| 33 | Совещание 5 | 2021-03-31 09:00 A | 2021-03-31 10:00 A |  | 0% → 100% | 77.96d → none |  |
| 34 | Совещание 6 | 2021-04-07 09:00 → 2021-04-07 08:00 A |  |  | 0% → 99% | 72.96d → 77.96d | resources 3D аниматор; Web-дизайнер; Ведущий программист; Мультимедиа-корреспондент; Системный аналитик; Технический писатель; Художник-дизайнер → 3D аниматор; Ведущий программист; Мультимедиа-корреспондент; Распечатка презентации [3 шт] |
| 35 | Совещание 7 | 2021-04-14 09:00 A |  |  | 0% → 99% | 67.96d → 72.96d | resources 3D аниматор; Web-дизайнер; Ведущий программист; Мультимедиа-корреспондент; Системный аналитик; Технический писатель; Художник-дизайнер → Ведущий программист; Мультимедиа-корреспондент; Распечатка презентации [2 шт] |
| 36 | Совещание 8 |  |  |  |  | 62.96d → 67.96d | resources 3D аниматор; Web-дизайнер; Ведущий программист; Мультимедиа-корреспондент; Системный аналитик; Технический писатель; Художник-дизайнер → Ведущий программист; Мультимедиа-корреспондент; Распечатка презентации [2 шт] |
| 37 | Совещание 9 |  |  |  |  | 57.96d → 62.96d | resources 3D аниматор; Web-дизайнер; Ведущий программист; Мультимедиа-корреспондент; Системный аналитик; Технический писатель; Художник-дизайнер → Ведущий программист; Мультимедиа-корреспондент; Распечатка презентации [2 шт] |
| 38 | Совещание 10 |  |  |  |  | 53.96d → 58.96d | resources 3D аниматор; Web-дизайнер; Ведущий программист; Мультимедиа-корреспондент; Системный аналитик; Технический писатель; Художник-дизайнер → Ведущий программист; Мультимедиа-корреспондент; Распечатка презентации [2 шт] |
| 39 | Совещание 11 |  |  |  |  | 49.96d → 54.96d | resources 3D аниматор; Web-дизайнер; Ведущий программист; Мультимедиа-корреспондент; Системный аналитик; Технический писатель; Художник-дизайнер → Ведущий программист; Мультимедиа-корреспондент; Распечатка презентации [2 шт] |
| 40 | Совещание 12 |  |  |  |  | 44.96d → 49.96d | resources 3D аниматор; Web-дизайнер; Ведущий программист; Мультимедиа-корреспондент; Системный аналитик; Технический писатель; Художник-дизайнер → Ведущий программист; Мультимедиа-корреспондент; Распечатка презентации [2 шт] |
| 41 | Совещание 13 |  |  |  |  | 39.96d → 44.96d | resources 3D аниматор; Web-дизайнер; Ведущий программист; Мультимедиа-корреспондент; Системный аналитик; Технический писатель; Художник-дизайнер → Ведущий программист; Мультимедиа-корреспондент; Распечатка презентации [2 шт] |
| 42 | Совещание 14 |  |  |  |  | 34.96d → 39.96d | resources 3D аниматор; Web-дизайнер; Ведущий программист; Мультимедиа-корреспондент; Системный аналитик; Технический писатель; Художник-дизайнер → 3D аниматор; Web-дизайнер; Ведущий программист; Технический писатель; Художник-дизайнер; Распечатка презентации [5 шт] |
| 43 | Совещание 15 |  |  |  |  | 29.96d → 34.96d | resources 3D аниматор; Web-дизайнер; Ведущий программист; Мультимедиа-корреспондент; Системный аналитик; Технический писатель; Художник-дизайнер → 3D аниматор; Web-дизайнер; Технический писатель; Художник-дизайнер; Распечатка презентации [4 шт] |
| 44 | Совещание 16 |  |  |  |  | 25.96d → 30.96d | resources 3D аниматор; Web-дизайнер; Ведущий программист; Мультимедиа-корреспондент; Системный аналитик; Технический писатель; Художник-дизайнер → 3D аниматор; Web-дизайнер; Технический писатель; Художник-дизайнер; Распечатка презентации [4 шт] |
| 45 | Совещание 17 |  |  |  |  | 20.96d → 25.96d | resources 3D аниматор; Web-дизайнер; Ведущий программист; Мультимедиа-корреспондент; Системный аналитик; Технический писатель; Художник-дизайнер → 3D аниматор; Web-дизайнер; Технический писатель; Художник-дизайнер; Распечатка презентации [4 шт] |
| 46 | Совещание 18 |  |  |  |  | 15.96d → 20.96d | resources 3D аниматор; Web-дизайнер; Ведущий программист; Мультимедиа-корреспондент; Системный аналитик; Технический писатель; Художник-дизайнер → Web-дизайнер; Ведущий программист; Технический писатель; Распечатка презентации [3 шт] |
| 47 | Совещание 19 |  |  |  |  | 10.96d → 15.96d | resources 3D аниматор; Web-дизайнер; Ведущий программист; Мультимедиа-корреспондент; Системный аналитик; Технический писатель; Художник-дизайнер → Web-дизайнер; Ведущий программист; Технический писатель; Распечатка презентации [3 шт] |
| 48 | Совещание 20 |  |  |  |  | 5.96d → 10.96d | resources 3D аниматор; Web-дизайнер; Ведущий программист; Мультимедиа-корреспондент; Системный аналитик; Технический писатель; Художник-дизайнер → Web-дизайнер; Ведущий программист; Технический писатель; Распечатка презентации [3 шт] |
| 49 | Совещание 21 |  |  |  |  | 0.96d → 5.96d | resources 3D аниматор; Web-дизайнер; Ведущий программист; Мультимедиа-корреспондент; Системный аналитик; Технический писатель; Художник-дизайнер → Ведущий программист; Технический писатель; Распечатка презентации [2 шт] |
