How a schedule from MS Project changed from version to version. A marks actual dates.

## Version 1 (data date 2021-02-27, saved 2021-03-16, file lab4_1_13july(programmer)2.mpp)

Note of the change: added lab4 and lab5(task)

| ID | WBS | Task | Duration | Start | Finish | Predecessors | Total float | Constraint |
| --- | --- | --- | --- | --- | --- | --- | --- | --- |
| 1 |  | Начало проекта | 0w | 2021-03-01 08:00 | 2021-03-01 08:00 |  | 35.24d |  |
| 2 | 2 | **Создание интерфейса** | 68.36d | 2021-03-01 09:00 | 2021-06-08 11:55 | 1 | 0d |  |
| 3 | 2.1 | **Разработка дизайна интерфейса** | 25.62d | 2021-03-01 09:00 | 2021-04-06 15:00 |  | 35.24d |  |
| 4 |  | Разработка 2D графических элементов | 3w | 2021-03-01 09:00 | 2021-03-23 12:00 |  | 35.24d |  |
| 5 |  | Разработка 3D графичиских элементов | 2w | 2021-03-01 09:00 | 2021-03-16 11:00 | 4SS | 35.24d |  |
| 6 |  | Создание заставки | 3w | 2021-03-16 11:00 | 2021-04-06 15:00 | 5 | 35.24d |  |
| 7 |  | Программирование интерфейса | 1.5w | 2021-05-27 16:55 | 2021-06-08 11:55 | 3, 12 | 0d |  |
| 8 | 3 | **Построение базы объектов** | 85.25d | 2021-03-09 10:00 | 2021-07-09 12:00 |  | 1.8d |  |
| 9 |  | Анализ и построение структуры базы объектов | 2w | 2021-03-09 10:00 | 2021-03-23 12:00 |  | 1.8d |  |
| 10 |  | Программирование средств обработки базы объектов | 3w | 2021-03-23 12:00 | 2021-04-13 12:00 | 9 | 1.8d |  |
| 11 |  | Наполнение базы объектов | 12w | 2021-04-13 12:00 | 2021-07-09 12:00 | 10 | 1.8d |  |
| 12 | 4 | **Создание ядра GIS** | 60.86d | 2021-03-01 09:00 | 2021-05-27 16:55 |  | 0d |  |
| 13 |  | Анализ и проектирование ядра | 1.02w | 2021-03-01 09:00 | 2021-03-09 10:00 |  | 0d |  |
| 14 |  | Создание модели ядра | 2.02w | 2021-03-09 10:00 | 2021-03-23 10:49 | 13 | 0d |  |
| 15 |  | Тестирование модели ядра | 1w | 2021-03-23 10:49 | 2021-03-30 10:49 | 14 | 0d |  |
| 16 |  | Создание рабочей версии ядра | 8.13w | 2021-03-30 10:49 | 2021-05-27 16:55 | 15 | 0d |  |
| 17 |  | Создание мультимедиа - наполнения | 6w | 2021-04-06 15:00 | 2021-05-21 13:00 | 3 | 35.68d |  |
| 18 |  | Создание справочной системы | 2w | 2021-06-21 10:55 | 2021-07-06 09:50 | 7 | 5.07d |  |
| 19 | 7 | **Создание руководства пользователя** | 17.88d | 2021-05-25 11:55 | 2021-06-21 10:55 | 7FS-10d | 0d |  |
| 20 |  | Разработка дизайна руководства | 1w | 2021-05-25 11:55 | 2021-06-01 14:55 |  | 0d |  |
| 21 |  | Написание руководства пользователя | 3w | 2021-05-27 11:55 | 2021-06-21 10:55 | 20SS+2d | 0d |  |
| 22 | 8 | **Создание web - сайта и поддержка** | 24.38d | 2021-05-27 11:55 | 2021-07-01 15:55 |  | 0d |  |
| 23 |  | Разработка структуры сайта | 1d | 2021-05-27 11:55 | 2021-05-28 11:55 | 21SS | 0d |  |
| 24 |  | Разработка дизайна сайта | 1.45w | 2021-05-28 11:55 | 2021-06-08 16:55 | 23 | 0d |  |
| 25 |  | Наполнение сайта | 3w | 2021-06-08 16:55 | 2021-07-01 15:55 | 24 | 0d |  |
| 26 |  | Тестирование сайта | 2.49w | 2021-06-24 15:55 | 2021-07-13 10:25 | 22FS-1w | 0d |  |
| 27 |  | Сдача сайта в эксплуатацию | 0w | 2021-07-13 10:25 | 2021-07-13 10:25 | 26 | 0d |  |
| 28 | 11 | **Совещание** | 86.12d | 2021-03-03 09:00 | 2021-07-07 10:00 |  | 4.05d |  |
| 29 |  | Совещание 1 | 1h | 2021-03-03 09:00 | 2021-03-03 10:00 |  | 90.05d | start no earlier than 2021-03-03 08:00 |
| 30 |  | Совещание 2 | 1h | 2021-03-10 09:00 | 2021-03-10 10:00 |  | 86.05d | start no earlier than 2021-03-10 08:00 |
| 31 |  | Совещание 3 | 1h | 2021-03-17 09:00 | 2021-03-17 10:00 |  | 81.05d | start no earlier than 2021-03-17 08:00 |
| 32 |  | Совещание 4 | 1h | 2021-03-24 09:00 | 2021-03-24 10:00 |  | 76.05d | start no earlier than 2021-03-24 08:00 |
| 33 |  | Совещание 5 | 1h | 2021-03-31 09:00 | 2021-03-31 10:00 |  | 71.05d | start no earlier than 2021-03-31 08:00 |
| 34 |  | Совещание 6 | 1h | 2021-04-07 08:00 | 2021-04-07 10:00 |  | 66.05d | start no earlier than 2021-04-07 08:00 |
| 35 |  | Совещание 7 | 1h | 2021-04-14 08:00 | 2021-04-14 10:00 |  | 61.05d | start no earlier than 2021-04-14 08:00 |
| 36 |  | Совещание 8 | 1h | 2021-04-21 09:00 | 2021-04-21 10:00 |  | 56.05d | start no earlier than 2021-04-21 08:00 |
| 37 |  | Совещание 9 | 1h | 2021-04-28 09:00 | 2021-04-28 10:00 |  | 51.05d | start no earlier than 2021-04-28 08:00 |
| 38 |  | Совещание 10 | 1h | 2021-05-05 09:00 | 2021-05-05 10:00 |  | 47.05d | start no earlier than 2021-05-05 08:00 |
| 39 |  | Совещание 11 | 1h | 2021-05-12 09:00 | 2021-05-12 10:00 |  | 43.05d | start no earlier than 2021-05-12 08:00 |
| 40 |  | Совещание 12 | 1h | 2021-05-19 09:00 | 2021-05-19 10:00 |  | 38.05d | start no earlier than 2021-05-19 08:00 |
| 41 |  | Совещание 13 | 1h | 2021-05-26 09:00 | 2021-05-26 10:00 |  | 33.05d | start no earlier than 2021-05-26 08:00 |
| 42 |  | Совещание 14 | 1h | 2021-06-02 09:00 | 2021-06-02 10:00 |  | 28.05d | start no earlier than 2021-06-02 08:00 |
| 43 |  | Совещание 15 | 1h | 2021-06-09 09:00 | 2021-06-09 10:00 |  | 23.05d | start no earlier than 2021-06-09 08:00 |
| 44 |  | Совещание 16 | 1h | 2021-06-16 09:00 | 2021-06-16 10:00 |  | 19.05d | start no earlier than 2021-06-16 08:00 |
| 45 |  | Совещание 17 | 1h | 2021-06-23 09:00 | 2021-06-23 10:00 |  | 14.05d | start no earlier than 2021-06-23 08:00 |
| 46 |  | Совещание 18 | 1h | 2021-06-30 09:00 | 2021-06-30 10:00 |  | 9.05d | start no earlier than 2021-06-30 08:00 |
| 47 |  | Совещание 19 | 1h | 2021-07-07 09:00 | 2021-07-07 10:00 |  | 4.05d | start no earlier than 2021-07-07 08:00 |

## Version 2 (data date 2021-04-30, saved 2021-03-19, file lab4_1_13july_final_task2.mpp)

Note of the change: added lab4 and lab5(task)

Last finish 2021-07-13 → 2021-07-21 (+8d). Complete tasks 0 → 17.

Changed:

| ID | Task | Start | Finish | Duration | Complete | Total float | Other |
| --- | --- | --- | --- | --- | --- | --- | --- |
| 1 | Начало проекта | 2021-03-01 08:00 A | 2021-03-01 08:00 A |  | 0% → 100% | 35.24d → none |  |
| 2 | **Создание интерфейса** | 2021-03-01 09:00 A | 2021-06-08 11:55 → 2021-06-17 10:05 (+9d) | 68.36d → 74.14d | 0% → 85% |  |  |
| 3 | **Разработка дизайна интерфейса** | 2021-03-01 09:00 A | 2021-04-06 15:00 → 2021-04-09 17:00 A (+3d) | 25.62d → 28.88d | 0% → 100% | 35.24d → none |  |
| 4 | Разработка 2D графических элементов | 2021-03-01 09:00 A | 2021-03-23 12:00 → 2021-03-25 12:00 A (+2d) | 3w → 3.3w | 0% → 100% | 35.24d → none |  |
| 5 | Разработка 3D графичиских элементов | 2021-03-01 09:00 A | 2021-03-16 11:00 → 2021-03-17 15:00 A (+1d) | 2w → 2.2w | 0% → 100% | 35.24d → none |  |
| 6 | Создание заставки | 2021-03-16 11:00 → 2021-03-17 15:00 A (+1d) | 2021-04-06 15:00 → 2021-04-09 17:00 A (+3d) | 3w → 3.3w | 0% → 100% | 35.24d → none |  |
| 7 | Программирование интерфейса | 2021-05-27 16:55 → 2021-06-04 15:05 (+8d) | 2021-06-08 11:55 → 2021-06-17 10:05 (+9d) |  |  |  |  |
| 8 | **Построение базы объектов** | 2021-03-09 10:00 A | 2021-07-09 12:00 → 2021-07-10 13:00 (+1d) | 85.25d → 85.88d | 0% → 24% | 1.8d → 7.72d |  |
| 9 | Анализ и построение структуры базы объектов | 2021-03-09 10:00 A | 2021-03-23 12:00 A |  | 0% → 100% | 1.8d → none |  |
| 10 | Программирование средств обработки базы объектов | 2021-03-23 12:00 A |  |  | 0% → 70% | 1.8d → 0.5d |  |
| 11 | Наполнение базы объектов | 2021-04-13 12:00 A | 2021-07-09 12:00 → 2021-07-10 13:00 (+1d) | 12w → 12.22w |  | 1.8d → 7.72d | resources Наборщик данных#1; Наборщик данных#2; Наборщик данных#3; Наборщик данных#4; Наборщик данных#5 → Наборщик данных#1; Наборщик данных#2; Наборщик данных#3; Наборщик данных#4; Наборщик данных#5; Наборщик данных#6 |
| 12 | **Создание ядра GIS** | 2021-03-01 09:00 A | 2021-05-27 16:55 → 2021-06-04 15:05 (+8d) | 60.86d → 66.64d | 0% → 39% |  |  |
| 13 | Анализ и проектирование ядра | 2021-03-01 09:00 A | 2021-03-09 10:00 A |  | 0% → 100% | 0d → none |  |
| 14 | Создание модели ядра | 2021-03-09 10:00 A | 2021-03-23 10:49 A |  | 0% → 100% | 0d → none |  |
| 15 | Тестирование модели ядра | 2021-03-23 10:49 A | 2021-03-30 10:49 → 2021-04-06 18:00 A (+7d) | 1w → 2.15w | 0% → 100% | 0d → none |  |
| 16 | Создание рабочей версии ядра | 2021-03-30 10:49 → 2021-04-07 09:00 A (+8d) | 2021-05-27 16:55 → 2021-06-04 15:05 (+8d) |  |  |  |  |
| 17 | Создание мультимедиа - наполнения | 2021-04-06 15:00 → 2021-04-09 17:00 A (+3d) | 2021-05-21 13:00 → 2021-05-27 15:00 (+6d) |  |  | 35.68d → 38.09d |  |
| 18 | Создание справочной системы | 2021-06-21 10:55 → 2021-06-30 10:00 (+9d) | 2021-07-06 09:50 → 2021-07-15 09:55 (+9d) |  |  | 5.07d → 4.61d |  |
| 19 | **Создание руководства пользователя** | 2021-05-25 11:55 → 2021-06-02 10:05 (+8d) | 2021-06-21 10:55 → 2021-06-29 12:05 (+8d) | 17.88d → 18.25d |  |  |  |
| 20 | Разработка дизайна руководства | 2021-05-25 11:55 → 2021-06-02 10:05 (+8d) | 2021-06-01 14:55 → 2021-06-09 14:05 (+8d) |  |  |  |  |
| 21 | Написание руководства пользователя | 2021-05-27 11:55 → 2021-06-04 10:05 (+8d) | 2021-06-21 10:55 → 2021-06-29 12:05 (+8d) |  |  |  |  |
| 22 | **Создание web - сайта и поддержка** | 2021-05-27 11:55 → 2021-06-04 10:05 (+8d) | 2021-07-01 15:55 → 2021-07-12 10:05 (+11d) | 24.38d → 25d |  |  |  |
| 23 | Разработка структуры сайта | 2021-05-27 11:55 → 2021-06-04 10:05 (+8d) | 2021-05-28 11:55 → 2021-06-07 10:05 (+10d) |  |  |  |  |
| 24 | Разработка дизайна сайта | 2021-05-28 11:55 → 2021-06-07 10:05 (+10d) | 2021-06-08 16:55 → 2021-06-17 17:05 (+9d) |  |  |  |  |
| 25 | Наполнение сайта | 2021-06-08 16:55 → 2021-06-17 17:05 (+9d) | 2021-07-01 15:55 → 2021-07-12 10:05 (+11d) |  |  |  |  |
| 26 | Тестирование сайта | 2021-06-24 15:55 → 2021-07-05 10:05 (+11d) | 2021-07-13 10:25 → 2021-07-21 15:45 (+8d) | 2.49w → 2.52w |  |  |  |
| 27 | Сдача сайта в эксплуатацию | 2021-07-13 10:25 → 2021-07-21 15:45 (+8d) | 2021-07-13 10:25 → 2021-07-21 15:45 (+8d) |  |  |  |  |
| 28 | **Совещание** | 2021-03-03 09:00 A |  |  | 0% → 47% | 4.05d → 10.59d |  |
| 29 | Совещание 1 | 2021-03-03 09:00 A | 2021-03-03 10:00 A |  | 0% → 100% | 90.05d → none |  |
| 30 | Совещание 2 | 2021-03-10 09:00 A | 2021-03-10 10:00 A |  | 0% → 100% | 86.05d → none |  |
| 31 | Совещание 3 | 2021-03-17 09:00 A | 2021-03-17 10:00 A |  | 0% → 100% | 81.05d → none |  |
| 32 | Совещание 4 | 2021-03-24 09:00 A | 2021-03-24 10:00 A |  | 0% → 100% | 76.05d → none |  |
| 33 | Совещание 5 | 2021-03-31 09:00 A | 2021-03-31 10:00 A |  | 0% → 100% | 71.05d → none |  |
| 34 | Совещание 6 | 2021-04-07 08:00 A | 2021-04-07 10:00 A |  | 0% → 100% | 66.05d → none |  |
| 35 | Совещание 7 | 2021-04-14 08:00 A | 2021-04-14 10:00 A |  | 0% → 100% | 61.05d → none |  |
| 36 | Совещание 8 | 2021-04-21 09:00 A | 2021-04-21 10:00 A |  | 0% → 100% | 56.05d → none |  |
| 37 | Совещание 9 | 2021-04-28 09:00 A | 2021-04-28 10:00 A |  | 0% → 100% | 51.05d → none |  |
