How a schedule from MS Project changed from version to version. A marks actual dates.

## Version 1 (data date 2021-04-14, saved 2021-04-03, file lab5 (send).mpp)

Note of the change: Added gpaph for task1

| ID | WBS | Task | Duration | Start | Finish | Predecessors | Complete | Total float | Constraint |
| --- | --- | --- | --- | --- | --- | --- | --- | --- | --- |
| 1 |  | Начало проекта | 0w | 2021-03-01 08:00 A | 2021-03-01 08:00 A |  | 100% |  |  |
| 2 | 2 | **Анализ** | 20.5d | 2021-03-09 10:00 A | 2021-04-06 15:00 A |  | 100% |  |  |
| 3 |  | Анализ и построение структуры базы объектов | 2w | 2021-03-23 12:00 A | 2021-04-06 15:00 A |  | 100% |  |  |
| 4 |  | Анализ и проектирование ядра | 1w | 2021-03-09 10:00 A | 2021-03-16 10:00 A |  | 100% |  |  |
| 5 | 3 | **Разработка** | 35.5d | 2021-03-01 09:00 A | 2021-04-20 13:00 |  | 93% | 74.5d |  |
| 6 |  | Разработка 2D графических элементов | 3w | 2021-03-01 09:00 A | 2021-03-23 12:00 A |  | 100% |  |  |
| 7 |  | Разработка 3D графичиских элементов | 2w | 2021-03-08 08:00 A | 2021-03-23 12:00 A | 6SS | 100% |  |  |
| 8 |  | Разработка дизайна руководства | 1w | 2021-03-23 12:00 A | 2021-03-30 13:00 A |  | 100% |  |  |
| 9 |  | Разработка структуры сайта | 1d | 2021-03-25 12:00 A | 2021-03-26 12:00 A | 21SS | 100% |  |  |
| 10 |  | Разработка дизайна сайта | 2.4w | 2021-03-26 12:00 A | 2021-04-20 13:00 | 9 | 71% | 74.5d |  |
| 11 |  | Создание модели ядра | 2.02w | 2021-03-09 10:00 A | 2021-03-23 10:49 A | 4 | 100% |  |  |
| 12 | 4 | **Программирование** | 75.11d | 2021-03-01 09:00 A | 2021-06-18 09:55 |  | 62% | 49.89d |  |
| 13 |  | Создание заставки | 3w | 2021-03-23 12:00 A | 2021-04-13 16:00 A | 7 | 100% |  |  |
| 14 |  | Программирование интерфейса | 1.76w | 2021-03-01 09:00 A | 2021-03-30 09:10 A |  | 100% |  |  |
| 15 |  | Программирование средств обработки базы объектов | 3w | 2021-04-13 12:00 A | 2021-06-17 18:00 A | 3 | 100% |  |  |
| 16 |  | Создание рабочей версии ядра | 7.02w | 2021-04-06 09:00 A | 2021-06-18 09:55 | 24 | 20% | 49.89d |  |
| 17 | 5 | **Наполнение данных** | 107.62d | 2021-03-25 12:00 A | 2021-08-26 18:00 |  | 13% | 0d |  |
| 18 |  | Наполнение базы объектов | 10w | 2021-06-18 09:00 | 2021-08-26 18:00 | 15 |  | 0d |  |
| 19 |  | Создание справочной системы | 2w | 2021-04-16 11:54 | 2021-04-30 11:54 | 14 |  | 91.64d |  |
| 20 |  | Создание мультимедиа - наполнения | 6w | 2021-04-13 16:00 A | 2021-05-28 15:00 |  | 4% | 63.38d |  |
| 21 |  | Написание руководства пользователя | 3w | 2021-03-25 12:00 A | 2021-04-15 13:00 | 8SS+2d | 97% | 92.5d |  |
| 22 |  | Наполнение сайта | 3w | 2021-04-20 14:00 | 2021-05-13 13:00 | 10 |  | 84.5d |  |
| 23 | 6 | **Тестирование** | 64.26d | 2021-03-23 09:00 A | 2021-06-24 11:06 |  | 63% | 45.74d |  |
| 24 |  | Тестирование модели ядра | 1.95w | 2021-03-23 10:49 A | 2021-04-05 18:00 A | 11 | 100% |  |  |
| 25 |  | Тестирование сайта | 4.81w | 2021-03-23 09:00 A | 2021-06-24 11:06 | 9FS-1w | 48% | 45.74d |  |
| 26 |  | Сдача сайта в эксплуатацию | 0w | 2021-08-26 18:00 | 2021-08-26 18:00 | 17, 25 |  | 0d |  |
| 27 | 8 | **Совещание** | 96.12d | 2021-03-03 09:00 A | 2021-07-21 10:00 |  | 33% | 26.88d |  |
| 28 |  | Совещание 1 | 1h | 2021-03-03 09:00 A | 2021-03-03 10:00 A |  | 100% |  | start no earlier than 2021-03-03 08:00 |
| 29 |  | Совещание 2 | 1h | 2021-03-10 09:00 A | 2021-03-10 10:00 A |  | 100% |  | start no earlier than 2021-03-10 08:00 |
| 30 |  | Совещание 3 | 1h | 2021-03-17 09:00 A | 2021-03-17 10:00 A |  | 100% |  | start no earlier than 2021-03-17 08:00 |
| 31 |  | Совещание 4 | 1h | 2021-03-24 09:00 A | 2021-03-24 10:00 A |  | 100% |  | start no earlier than 2021-03-24 08:00 |
| 32 |  | Совещание 5 | 1h | 2021-03-31 09:00 A | 2021-03-31 10:00 A |  | 100% |  | start no earlier than 2021-03-31 08:00 |
| 33 |  | Совещание 6 | 1h | 2021-04-07 08:00 A | 2021-04-07 10:00 A |  | 100% |  | start no earlier than 2021-04-07 08:00 |
| 34 |  | Совещание 7 | 1h | 2021-04-14 09:00 A | 2021-04-14 10:00 A |  | 100% |  | start no earlier than 2021-04-14 08:00 |
| 35 |  | Совещание 8 | 1h | 2021-04-21 09:00 | 2021-04-21 10:00 |  |  | 98.88d | start no earlier than 2021-04-21 08:00 |
| 36 |  | Совещание 9 | 1h | 2021-04-28 09:00 | 2021-04-28 10:00 |  |  | 93.88d | start no earlier than 2021-04-28 08:00 |
| 37 |  | Совещание 10 | 1h | 2021-05-05 09:00 | 2021-05-05 10:00 |  |  | 89.88d | start no earlier than 2021-05-05 08:00 |
| 38 |  | Совещание 11 | 1h | 2021-05-12 09:00 | 2021-05-12 10:00 |  |  | 85.88d | start no earlier than 2021-05-12 08:00 |
| 39 |  | Совещание 12 | 1h | 2021-05-19 09:00 | 2021-05-19 10:00 |  |  | 80.88d | start no earlier than 2021-05-19 08:00 |
| 40 |  | Совещание 13 | 1h | 2021-05-26 09:00 | 2021-05-26 10:00 |  |  | 75.88d | start no earlier than 2021-05-26 08:00 |
| 41 |  | Совещание 14 | 1h | 2021-06-02 09:00 | 2021-06-02 10:00 |  |  | 70.88d | start no earlier than 2021-06-02 08:00 |
| 42 |  | Совещание 15 | 1h | 2021-06-09 09:00 | 2021-06-09 10:00 |  |  | 65.88d | start no earlier than 2021-06-09 08:00 |
| 43 |  | Совещание 16 | 1h | 2021-06-16 09:00 | 2021-06-16 10:00 |  |  | 61.88d | start no earlier than 2021-06-16 08:00 |
| 44 |  | Совещание 17 | 1h | 2021-06-23 09:00 | 2021-06-23 10:00 |  |  | 56.88d | start no earlier than 2021-06-23 08:00 |
| 45 |  | Совещание 18 | 1h | 2021-06-30 09:00 | 2021-06-30 10:00 |  |  | 51.88d | start no earlier than 2021-06-30 08:00 |
| 46 |  | Совещание 19 | 1h | 2021-07-07 09:00 | 2021-07-07 10:00 |  |  | 46.88d | start no earlier than 2021-07-07 08:00 |
| 47 |  | Совещание 20 | 1h | 2021-07-14 09:00 | 2021-07-14 10:00 |  |  | 41.88d | start no earlier than 2021-07-14 08:00 |
| 48 |  | Совещание 21 | 1h | 2021-07-21 09:00 | 2021-07-21 10:00 |  |  | 36.88d | start no earlier than 2021-07-21 08:00 |

## Version 2 (data date 2021-04-30, saved 2021-03-27, file lab5.mpp)

Note of the change: Added gpaph for task1

Last finish 2021-08-26 → 2021-07-21 (-36d). Complete tasks 19 → 17.

Added:

| ID | Task | Duration | Start | Finish | Predecessors | Resources |
| --- | --- | --- | --- | --- | --- | --- |
| 2 | **Создание интерфейса** | 74.14d | 2021-03-01 09:00 A | 2021-06-17 10:05 | 1 |  |
| 3 | **Разработка дизайна интерфейса** | 28.88d | 2021-03-01 09:00 A | 2021-04-09 17:00 A |  | ПО для дизайна [0.1%] |
| 8 | **Построение базы объектов** | 86.3d | 2021-03-09 10:00 A | 2021-07-12 12:24 |  | Дополнительный сервер |
| 12 | **Создание ядра GIS** | 66.64d | 2021-03-01 09:00 A | 2021-06-04 15:05 |  |  |
| 19 | **Создание руководства пользователя** | 18.25d | 2021-06-02 10:05 | 2021-06-29 12:05 | 7FS-10d |  |
| 22 | **Создание web - сайта и поддержка** | 25d | 2021-06-04 10:05 | 2021-07-12 10:05 |  |  |

Removed: 2 Анализ; 5 Разработка; 12 Программирование; 17 Наполнение данных; 23 Тестирование; 47 Совещание 20; 48 Совещание 21

Changed:

| ID | Task | Start | Finish | Duration | Complete | Total float | Predecessors | Other |
| --- | --- | --- | --- | --- | --- | --- | --- | --- |
| 4 | Разработка 2D графических элементов |  | 2021-03-23 12:00 A → 2021-03-25 12:00 A (+2d) | 3w → 3.3w |  |  |  | baseline start 2021-03-01 10:00 → 2021-03-01 09:00; baseline finish 2021-03-23 13:00 → 2021-03-23 12:00 |
| 5 | Разработка 3D графичиских элементов | 2021-03-08 08:00 A → 2021-03-01 09:00 A (-7d) | 2021-03-23 12:00 A → 2021-03-17 15:00 A (-6d) | 2w → 2.2w |  |  |  | baseline start 2021-03-01 10:00 → 2021-03-01 09:00; baseline finish 2021-03-16 12:00 → 2021-03-16 11:00 |
| 6 | Создание заставки | 2021-03-23 12:00 A → 2021-03-17 15:00 A (-6d) | 2021-04-13 16:00 A → 2021-04-09 17:00 A (-4d) | 3w → 3.3w |  |  |  | baseline start 2021-03-16 12:00 → 2021-03-16 11:00; baseline finish 2021-04-06 16:00 → 2021-04-06 15:00 |
| 7 | Программирование интерфейса | 2021-03-01 09:00 A → 2021-06-04 15:05 (+95d) | 2021-03-30 09:10 A → 2021-06-17 10:05 (+79d) | 1.76w → 1.5w | 100% → 0% | none → 0d | none → 3, 12 | resources Программист#4; Программист#1; Программист#2; Программист#3 → Программист#3; Программист#4; Программист#1; Программист#2; baseline start 2021-06-04 09:44 → 2021-05-27 16:55; baseline finish 2021-06-28 09:44 → 2021-06-08 11:55 |
| 9 | Анализ и построение структуры базы объектов | 2021-03-23 12:00 A → 2021-03-09 10:00 A (-14d) | 2021-04-06 15:00 A → 2021-03-23 12:00 A (-14d) |  |  |  |  | baseline start 2021-03-23 14:00 → 2021-03-09 10:00; baseline finish 2021-04-06 16:00 → 2021-03-23 12:00 |
| 10 | Программирование средств обработки базы объектов | 2021-04-13 12:00 A → 2021-03-23 12:00 A (-21d) | 2021-06-17 18:00 A → 2021-04-13 12:00 (-65d) |  | 100% → 70% | none → 13.62d |  | resources Программист#4; Программист#1 [160%]; Программист#2 [160%]; Программист#3 [160%] → Программист#3; Программист#4; baseline start 2021-04-06 16:00 → 2021-03-23 12:00; baseline finish 2021-04-27 16:00 → 2021-04-13 12:00 |
| 11 | Наполнение базы объектов | 2021-06-18 09:00 → 2021-04-13 12:00 A (-66d) | 2021-08-26 18:00 → 2021-07-12 12:24 (-45d) | 10w → 12.22w | 0% → 22% | 0d → 7.29d |  | resources Наборщик данны#6; Наборщик данных#1; Наборщик данных#2; Наборщик данных#3; Наборщик данных#4; Наборщик данных#5 → Наборщик данных#1; Наборщик данных#2; Наборщик данных#3; Наборщик данных#4; Наборщик данных#5; Наборщик данных#6; baseline start 2021-04-27 16:00 → 2021-04-13 12:00; baseline finish 2021-07-23 16:00 → 2021-07-09 12:00 |
| 13 | Анализ и проектирование ядра | 2021-03-09 10:00 A → 2021-03-01 09:00 A (-8d) | 2021-03-16 10:00 A → 2021-03-09 10:00 A (-7d) | 1w → 1.02w |  |  |  | baseline start 2021-03-01 10:00 → 2021-03-01 09:00; baseline finish 2021-03-09 11:00 → 2021-03-09 10:00 |
| 14 | Создание модели ядра |  |  |  |  |  |  | baseline start 2021-03-09 11:00 → 2021-03-09 10:00; baseline finish 2021-03-23 14:49 → 2021-03-23 10:49 |
| 15 | Тестирование модели ядра |  | 2021-04-05 18:00 A → 2021-04-06 18:00 A (+1d) | 1.95w → 2.15w |  |  |  | baseline start 2021-03-23 14:49 → 2021-03-23 10:49; baseline finish 2021-03-30 14:49 → 2021-03-30 10:49 |
| 16 | Создание рабочей версии ядра | 2021-04-06 09:00 A → 2021-04-07 09:00 A (+1d) | 2021-06-18 09:55 → 2021-06-04 15:05 (-14d) | 7.02w → 8.13w | 20% → 44% | 49.89d → 0d |  | baseline start 2021-03-30 14:49 → 2021-03-30 10:49; baseline finish 2021-06-04 09:44 → 2021-05-27 16:55 |
| 17 | Создание мультимедиа - наполнения | 2021-04-13 16:00 A → 2021-04-09 17:00 A (-4d) | 2021-05-28 15:00 → 2021-05-27 15:00 (-1d) |  | 4% → 48% | 63.38d → 38.09d | none → 3 | baseline start 2021-04-06 16:00 → 2021-04-06 15:00 |
| 18 | Создание справочной системы | 2021-04-16 11:54 → 2021-06-30 10:00 (+75d) | 2021-04-30 11:54 → 2021-07-15 09:55 (+76d) |  |  | 91.64d → 4.61d |  | baseline start 2021-07-12 10:00 → 2021-06-21 10:55; baseline finish 2021-07-26 12:00 → 2021-07-06 09:50 |
| 20 | Разработка дизайна руководства | 2021-03-23 12:00 A → 2021-06-02 10:05 (+71d) | 2021-03-30 13:00 A → 2021-06-09 14:05 (+71d) |  | 100% → 0% | none → 0d |  | baseline start 2021-06-11 09:44 → 2021-05-25 11:55; baseline finish 2021-06-21 14:44 → 2021-06-01 14:55 |
| 21 | Написание руководства пользователя | 2021-03-25 12:00 A → 2021-06-04 10:05 (+71d) | 2021-04-15 13:00 → 2021-06-29 12:05 (+75d) |  | 97% → 0% | 92.5d → 0d |  | baseline start 2021-06-16 09:44 → 2021-05-27 11:55; baseline finish 2021-07-08 10:44 → 2021-06-21 10:55 |
| 23 | Разработка структуры сайта | 2021-03-25 12:00 A → 2021-06-04 10:05 (+71d) | 2021-03-26 12:00 A → 2021-06-07 10:05 (+73d) |  | 100% → 0% | none → 0d |  | baseline start 2021-06-16 09:44 → 2021-05-27 11:55; baseline finish 2021-06-17 09:44 → 2021-05-28 11:55 |
| 24 | Разработка дизайна сайта | 2021-03-26 12:00 A → 2021-06-07 10:05 (+73d) | 2021-04-20 13:00 → 2021-06-17 17:05 (+58d) | 2.4w → 1.45w | 71% → 0% | 74.5d → 0d |  | baseline start 2021-06-17 09:44 → 2021-05-28 11:55; baseline finish 2021-06-28 16:44 → 2021-06-08 16:55 |
| 25 | Наполнение сайта | 2021-04-20 14:00 → 2021-06-17 17:05 (+58d) | 2021-05-13 13:00 → 2021-07-12 10:05 (+60d) |  |  | 84.5d → 0d |  | baseline start 2021-06-28 16:44 → 2021-06-08 16:55; baseline finish 2021-07-20 17:44 → 2021-07-01 15:55 |
| 26 | Тестирование сайта | 2021-03-23 09:00 A → 2021-07-05 10:05 (+104d) | 2021-06-24 11:06 → 2021-07-21 15:45 (+27d) | 4.81w → 2.52w | 48% → 0% | 45.74d → 0d | 23FS-1w → 22FS-1w | resources Программист#1; Программист#2; Ведущий программист; Программист#3; Программист#4 → Ведущий программист; Программист#1; Программист#2; Программист#3; Программист#4; baseline start 2021-07-13 17:44 → 2021-06-24 15:55; baseline finish 2021-08-02 10:23 → 2021-07-13 10:25 |
| 27 | Сдача сайта в эксплуатацию | 2021-08-26 18:00 → 2021-07-21 15:45 (-36d) | 2021-08-26 18:00 → 2021-07-21 15:45 (-36d) |  |  |  | Наполнение данных, 26 → 26 | baseline start none → 2021-07-13 10:25; baseline finish none → 2021-07-13 10:25 |
| 28 | **Совещание** |  | 2021-07-21 10:00 → 2021-07-07 10:00 (-14d) | 96.12d → 86.12d | 33% → 47% | 26.88d → 10.59d |  | resources Проектор [1 шт] → none; baseline start 2021-03-01 09:00 → 2021-03-03 09:00; baseline finish 2021-08-02 10:00 → 2021-07-07 10:00 |
| 29 | Совещание 1 |  |  |  |  |  |  | baseline start 2021-03-01 09:00 → 2021-03-03 09:00; baseline finish 2021-03-01 10:00 → 2021-03-03 10:00 |
| 30 | Совещание 2 |  |  |  |  |  |  | baseline start 2021-03-09 09:00 → 2021-03-10 09:00; baseline finish 2021-03-09 10:00 → 2021-03-10 10:00 |
| 31 | Совещание 3 |  |  |  |  |  |  | baseline start 2021-03-15 09:00 → 2021-03-17 09:00; baseline finish 2021-03-15 10:00 → 2021-03-17 10:00 |
| 32 | Совещание 4 |  |  |  |  |  |  | baseline start 2021-03-22 09:00 → 2021-03-24 09:00; baseline finish 2021-03-22 10:00 → 2021-03-24 10:00 |
| 33 | Совещание 5 |  |  |  |  |  |  | baseline start 2021-03-29 09:00 → 2021-03-31 09:00; baseline finish 2021-03-29 10:00 → 2021-03-31 10:00 |
| 34 | Совещание 6 |  |  |  |  |  |  | resources 3D аниматор; Ведущий программист; Мультимедиа-корреспондент; Распечатка презентации [3 шт] → 3D аниматор; Web-дизайнер; Ведущий программист; Мультимедиа-корреспондент; Системный аналитик; Технический писатель; Художник-дизайнер; baseline start 2021-04-05 09:00 → 2021-04-07 09:00; baseline finish 2021-04-05 10:00 → 2021-04-07 10:00 |
| 35 | Совещание 7 | 2021-04-14 09:00 A → 2021-04-14 08:00 A |  |  |  |  |  | resources Ведущий программист; Мультимедиа-корреспондент; Распечатка презентации [2 шт] → 3D аниматор; Web-дизайнер; Ведущий программист; Мультимедиа-корреспондент; Системный аналитик; Технический писатель; Художник-дизайнер; baseline start 2021-04-12 09:00 → 2021-04-14 09:00; baseline finish 2021-04-12 10:00 → 2021-04-14 10:00 |
| 36 | Совещание 8 | 2021-04-21 09:00 A | 2021-04-21 10:00 A |  | 0% → 100% | 98.88d → none |  | resources Ведущий программист; Мультимедиа-корреспондент; Распечатка презентации [2 шт] → 3D аниматор; Web-дизайнер; Ведущий программист; Мультимедиа-корреспондент; Системный аналитик; Технический писатель; Художник-дизайнер; baseline start 2021-04-19 09:00 → 2021-04-21 09:00; baseline finish 2021-04-19 10:00 → 2021-04-21 10:00 |
| 37 | Совещание 9 | 2021-04-28 09:00 A | 2021-04-28 10:00 A |  | 0% → 100% | 93.88d → none |  | resources Ведущий программист; Мультимедиа-корреспондент; Распечатка презентации [2 шт] → 3D аниматор; Web-дизайнер; Ведущий программист; Мультимедиа-корреспондент; Системный аналитик; Технический писатель; Художник-дизайнер; baseline start 2021-04-26 09:00 → 2021-04-28 09:00; baseline finish 2021-04-26 10:00 → 2021-04-28 10:00 |
| 38 | Совещание 10 |  |  |  |  | 89.88d → 53.59d |  | resources Ведущий программист; Мультимедиа-корреспондент; Распечатка презентации [2 шт] → 3D аниматор; Web-дизайнер; Ведущий программист; Мультимедиа-корреспондент; Системный аналитик; Технический писатель; Художник-дизайнер; baseline start 2021-05-04 09:00 → 2021-05-05 09:00; baseline finish 2021-05-04 10:00 → 2021-05-05 10:00 |
| 39 | Совещание 11 |  |  |  |  | 85.88d → 49.59d |  | resources Ведущий программист; Мультимедиа-корреспондент; Распечатка презентации [2 шт] → 3D аниматор; Web-дизайнер; Ведущий программист; Мультимедиа-корреспондент; Системный аналитик; Технический писатель; Художник-дизайнер; baseline start 2021-05-11 09:00 → 2021-05-12 09:00; baseline finish 2021-05-11 10:00 → 2021-05-12 10:00 |
| 40 | Совещание 12 |  |  |  |  | 80.88d → 44.59d |  | resources Ведущий программист; Мультимедиа-корреспондент; Распечатка презентации [2 шт] → 3D аниматор; Web-дизайнер; Ведущий программист; Мультимедиа-корреспондент; Системный аналитик; Технический писатель; Художник-дизайнер; baseline start 2021-05-17 09:00 → 2021-05-19 09:00; baseline finish 2021-05-17 10:00 → 2021-05-19 10:00 |
| 41 | Совещание 13 |  |  |  |  | 75.88d → 39.59d |  | resources Ведущий программист; Мультимедиа-корреспондент; Распечатка презентации [2 шт] → 3D аниматор; Web-дизайнер; Ведущий программист; Мультимедиа-корреспондент; Системный аналитик; Технический писатель; Художник-дизайнер; baseline start 2021-05-24 09:00 → 2021-05-26 09:00; baseline finish 2021-05-24 10:00 → 2021-05-26 10:00 |
| 42 | Совещание 14 |  |  |  |  | 70.88d → 34.59d |  | resources 3D аниматор; Web-дизайнер; Ведущий программист; Технический писатель; Художник-дизайнер; Распечатка презентации [5 шт] → 3D аниматор; Web-дизайнер; Ведущий программист; Мультимедиа-корреспондент; Системный аналитик; Технический писатель; Художник-дизайнер; baseline start 2021-05-31 09:00 → 2021-06-02 09:00; baseline finish 2021-05-31 10:00 → 2021-06-02 10:00 |
| 43 | Совещание 15 |  |  |  |  | 65.88d → 29.59d |  | resources 3D аниматор; Web-дизайнер; Технический писатель; Художник-дизайнер; Распечатка презентации [4 шт] → 3D аниматор; Web-дизайнер; Ведущий программист; Мультимедиа-корреспондент; Системный аналитик; Технический писатель; Художник-дизайнер; baseline start 2021-06-07 09:00 → 2021-06-09 09:00; baseline finish 2021-06-07 10:00 → 2021-06-09 10:00 |
| 44 | Совещание 16 |  |  |  |  | 61.88d → 25.59d |  | resources 3D аниматор; Web-дизайнер; Технический писатель; Художник-дизайнер; Распечатка презентации [4 шт] → 3D аниматор; Web-дизайнер; Ведущий программист; Мультимедиа-корреспондент; Системный аналитик; Технический писатель; Художник-дизайнер; baseline start 2021-06-15 09:00 → 2021-06-16 09:00; baseline finish 2021-06-15 10:00 → 2021-06-16 10:00 |
| 45 | Совещание 17 |  |  |  |  | 56.88d → 20.59d |  | resources 3D аниматор; Web-дизайнер; Технический писатель; Художник-дизайнер; Распечатка презентации [4 шт] → 3D аниматор; Web-дизайнер; Ведущий программист; Мультимедиа-корреспондент; Системный аналитик; Технический писатель; Художник-дизайнер; baseline start 2021-06-21 09:00 → 2021-06-23 09:00; baseline finish 2021-06-21 10:00 → 2021-06-23 10:00 |
| 46 | Совещание 18 |  |  |  |  | 51.88d → 15.59d |  | resources Web-дизайнер; Ведущий программист; Технический писатель; Распечатка презентации [3 шт] → 3D аниматор; Web-дизайнер; Ведущий программист; Мультимедиа-корреспондент; Системный аналитик; Технический писатель; Художник-дизайнер; baseline start 2021-06-28 09:00 → 2021-06-30 09:00; baseline finish 2021-06-28 10:00 → 2021-06-30 10:00 |
| 47 | Совещание 19 |  |  |  |  | 46.88d → 10.59d |  | resources Web-дизайнер; Ведущий программист; Технический писатель; Распечатка презентации [3 шт] → 3D аниматор; Web-дизайнер; Ведущий программист; Мультимедиа-корреспондент; Системный аналитик; Технический писатель; Художник-дизайнер; baseline start 2021-07-05 09:00 → 2021-07-07 09:00; baseline finish 2021-07-05 10:00 → 2021-07-07 10:00 |
