How a schedule from MS Project changed from version to version. A marks actual dates.

## Version 1 (data date 2021-04-30, saved 2021-03-19, file lab4_1_13july_final_task2.mpp)

Note of the change: lab4 report done

| ID | WBS | Task | Duration | Start | Finish | Predecessors | Complete | Total float | Constraint |
| --- | --- | --- | --- | --- | --- | --- | --- | --- | --- |
| 1 |  | Начало проекта | 0w | 2021-03-01 08:00 A | 2021-03-01 08:00 A |  | 100% |  |  |
| 2 | 2 | **Создание интерфейса** | 74.14d | 2021-03-01 09:00 A | 2021-06-17 10:05 | 1 | 85% | 0d |  |
| 3 | 2.1 | **Разработка дизайна интерфейса** | 28.88d | 2021-03-01 09:00 A | 2021-04-09 17:00 A |  | 100% |  |  |
| 4 |  | Разработка 2D графических элементов | 3.3w | 2021-03-01 09:00 A | 2021-03-25 12:00 A |  | 100% |  |  |
| 5 |  | Разработка 3D графичиских элементов | 2.2w | 2021-03-01 09:00 A | 2021-03-17 15:00 A | 4SS | 100% |  |  |
| 6 |  | Создание заставки | 3.3w | 2021-03-17 15:00 A | 2021-04-09 17:00 A | 5 | 100% |  |  |
| 7 |  | Программирование интерфейса | 1.5w | 2021-06-04 15:05 | 2021-06-17 10:05 | 3, 12 |  | 0d |  |
| 8 | 3 | **Построение базы объектов** | 85.88d | 2021-03-09 10:00 A | 2021-07-10 13:00 |  | 24% | 7.72d |  |
| 9 |  | Анализ и построение структуры базы объектов | 2w | 2021-03-09 10:00 A | 2021-03-23 12:00 A |  | 100% |  |  |
| 10 |  | Программирование средств обработки базы объектов | 3w | 2021-03-23 12:00 A | 2021-04-13 12:00 | 9 | 70% | 0.5d |  |
| 11 |  | Наполнение базы объектов | 12.22w | 2021-04-13 12:00 A | 2021-07-10 13:00 | 10 |  | 7.72d |  |
| 12 | 4 | **Создание ядра GIS** | 66.64d | 2021-03-01 09:00 A | 2021-06-04 15:05 |  | 39% | 0d |  |
| 13 |  | Анализ и проектирование ядра | 1.02w | 2021-03-01 09:00 A | 2021-03-09 10:00 A |  | 100% |  |  |
| 14 |  | Создание модели ядра | 2.02w | 2021-03-09 10:00 A | 2021-03-23 10:49 A | 13 | 100% |  |  |
| 15 |  | Тестирование модели ядра | 2.15w | 2021-03-23 10:49 A | 2021-04-06 18:00 A | 14 | 100% |  |  |
| 16 |  | Создание рабочей версии ядра | 8.13w | 2021-04-07 09:00 A | 2021-06-04 15:05 | 15 |  | 0d |  |
| 17 |  | Создание мультимедиа - наполнения | 6w | 2021-04-09 17:00 A | 2021-05-27 15:00 | 3 |  | 38.09d |  |
| 18 |  | Создание справочной системы | 2w | 2021-06-30 10:00 | 2021-07-15 09:55 | 7 |  | 4.61d |  |
| 19 | 7 | **Создание руководства пользователя** | 18.25d | 2021-06-02 10:05 | 2021-06-29 12:05 | 7FS-10d |  | 0d |  |
| 20 |  | Разработка дизайна руководства | 1w | 2021-06-02 10:05 | 2021-06-09 14:05 |  |  | 0d |  |
| 21 |  | Написание руководства пользователя | 3w | 2021-06-04 10:05 | 2021-06-29 12:05 | 20SS+2d |  | 0d |  |
| 22 | 8 | **Создание web - сайта и поддержка** | 25d | 2021-06-04 10:05 | 2021-07-12 10:05 |  |  | 0d |  |
| 23 |  | Разработка структуры сайта | 1d | 2021-06-04 10:05 | 2021-06-07 10:05 | 21SS |  | 0d |  |
| 24 |  | Разработка дизайна сайта | 1.45w | 2021-06-07 10:05 | 2021-06-17 17:05 | 23 |  | 0d |  |
| 25 |  | Наполнение сайта | 3w | 2021-06-17 17:05 | 2021-07-12 10:05 | 24 |  | 0d |  |
| 26 |  | Тестирование сайта | 2.52w | 2021-07-05 10:05 | 2021-07-21 15:45 | 22FS-1w |  | 0d |  |
| 27 |  | Сдача сайта в эксплуатацию | 0w | 2021-07-21 15:45 | 2021-07-21 15:45 | 26 |  | 0d |  |
| 28 | 11 | **Совещание** | 86.12d | 2021-03-03 09:00 A | 2021-07-07 10:00 |  | 47% | 10.59d |  |
| 29 |  | Совещание 1 | 1h | 2021-03-03 09:00 A | 2021-03-03 10:00 A |  | 100% |  | start no earlier than 2021-03-03 08:00 |
| 30 |  | Совещание 2 | 1h | 2021-03-10 09:00 A | 2021-03-10 10:00 A |  | 100% |  | start no earlier than 2021-03-10 08:00 |
| 31 |  | Совещание 3 | 1h | 2021-03-17 09:00 A | 2021-03-17 10:00 A |  | 100% |  | start no earlier than 2021-03-17 08:00 |
| 32 |  | Совещание 4 | 1h | 2021-03-24 09:00 A | 2021-03-24 10:00 A |  | 100% |  | start no earlier than 2021-03-24 08:00 |
| 33 |  | Совещание 5 | 1h | 2021-03-31 09:00 A | 2021-03-31 10:00 A |  | 100% |  | start no earlier than 2021-03-31 08:00 |
| 34 |  | Совещание 6 | 1h | 2021-04-07 08:00 A | 2021-04-07 10:00 A |  | 100% |  | start no earlier than 2021-04-07 08:00 |
| 35 |  | Совещание 7 | 1h | 2021-04-14 08:00 A | 2021-04-14 10:00 A |  | 100% |  | start no earlier than 2021-04-14 08:00 |
| 36 |  | Совещание 8 | 1h | 2021-04-21 09:00 A | 2021-04-21 10:00 A |  | 100% |  | start no earlier than 2021-04-21 08:00 |
| 37 |  | Совещание 9 | 1h | 2021-04-28 09:00 A | 2021-04-28 10:00 A |  | 100% |  | start no earlier than 2021-04-28 08:00 |
| 38 |  | Совещание 10 | 1h | 2021-05-05 09:00 | 2021-05-05 10:00 |  |  | 53.59d | start no earlier than 2021-05-05 08:00 |
| 39 |  | Совещание 11 | 1h | 2021-05-12 09:00 | 2021-05-12 10:00 |  |  | 49.59d | start no earlier than 2021-05-12 08:00 |
| 40 |  | Совещание 12 | 1h | 2021-05-19 09:00 | 2021-05-19 10:00 |  |  | 44.59d | start no earlier than 2021-05-19 08:00 |
| 41 |  | Совещание 13 | 1h | 2021-05-26 09:00 | 2021-05-26 10:00 |  |  | 39.59d | start no earlier than 2021-05-26 08:00 |
| 42 |  | Совещание 14 | 1h | 2021-06-02 09:00 | 2021-06-02 10:00 |  |  | 34.59d | start no earlier than 2021-06-02 08:00 |
| 43 |  | Совещание 15 | 1h | 2021-06-09 09:00 | 2021-06-09 10:00 |  |  | 29.59d | start no earlier than 2021-06-09 08:00 |
| 44 |  | Совещание 16 | 1h | 2021-06-16 09:00 | 2021-06-16 10:00 |  |  | 25.59d | start no earlier than 2021-06-16 08:00 |
| 45 |  | Совещание 17 | 1h | 2021-06-23 09:00 | 2021-06-23 10:00 |  |  | 20.59d | start no earlier than 2021-06-23 08:00 |
| 46 |  | Совещание 18 | 1h | 2021-06-30 09:00 | 2021-06-30 10:00 |  |  | 15.59d | start no earlier than 2021-06-30 08:00 |
| 47 |  | Совещание 19 | 1h | 2021-07-07 09:00 | 2021-07-07 10:00 |  |  | 10.59d | start no earlier than 2021-07-07 08:00 |

## Version 2 (data date 2021-04-30, saved 2021-03-27, file lab5_Done.mpp)

Note of the change: Added RK

Last finish 2021-07-21 → 2021-07-12 (-9d). Complete tasks 17 → 18.

Added:

| ID | Task | Duration | Start | Finish | Resources |
| --- | --- | --- | --- | --- | --- |
| 2 | **Анализ** | 15.38d | 2021-03-01 09:00 A | 2021-03-23 12:00 A |  |
| 5 | **Разработка** | 33.29d | 2021-03-01 09:00 A | 2021-04-16 11:19 |  |
| 13 | **Программирование** | 56.74d | 2021-03-17 15:00 A | 2021-06-08 11:55 |  |
| 18 | **Наполнение данных** | 87.1d | 2021-03-05 11:35 A | 2021-07-12 12:24 | Дополнительный сервер |
| 24 | **Тестирование** | 25.68d | 2021-03-01 11:35 A | 2021-04-06 18:00 |  |

Removed: 2 Создание интерфейса; 8 Построение базы объектов; 12 Создание ядра GIS; 19 Создание руководства пользователя; 22 Создание web - сайта и поддержка

Changed:

| ID | Task | Start | Finish | Duration | Total float | Predecessors |
| --- | --- | --- | --- | --- | --- | --- |
| 8 | Разработка дизайна руководства | 2021-06-02 10:05 → 2021-03-03 11:35 (-91d) | 2021-06-09 14:05 → 2021-04-01 09:43 (-69d) |  | 0d → 42.76d |  |
| 9 | Разработка структуры сайта | 2021-06-04 10:05 → 2021-03-05 11:35 (-91d) | 2021-06-07 10:05 → 2021-03-09 11:35 (-90d) |  | 0d → 42.76d |  |
| 10 | Разработка дизайна сайта | 2021-06-07 10:05 → 2021-03-09 11:35 (-90d) | 2021-06-17 17:05 → 2021-04-16 11:19 (-62d) | 1.45w → 2.92w | 0d → 42.76d |  |
| 11 | Разработка дизайна интерфейса | 2021-03-01 09:00 A → 2021-03-17 15:00 A (+16d) |  | 28.88d → 11.25d |  |  |
| 15 | Программирование интерфейса | 2021-06-04 15:05 → 2021-04-09 17:00 (-56d) | 2021-06-17 10:05 → 2021-06-08 11:55 (-9d) | 1.5w → 1.96w | 0d → 12.44d | 11, Создание ядра GIS → 11 |
| 17 | Создание рабочей версии ядра |  | 2021-06-04 15:05 → 2021-06-03 09:23 (-1d) | 8.13w → 6.21w | 0d → 26.38d |  |
| 19 | Наполнение базы объектов |  | 2021-07-10 13:00 → 2021-07-12 12:24 (+2d) |  | 7.72d → 0d |  |
| 20 | Создание справочной системы | 2021-06-30 10:00 → 2021-06-08 11:55 (-22d) | 2021-07-15 09:55 → 2021-06-23 17:55 (-22d) |  | 4.61d → 12.44d |  |
| 21 | Создание мультимедиа - наполнения |  | 2021-05-27 15:00 → 2021-05-26 16:00 (-1d) |  | 38.09d → 31.68d |  |
| 22 | Написание руководства пользователя | 2021-06-04 10:05 → 2021-03-05 11:35 (-91d) | 2021-06-29 12:05 → 2021-03-29 15:35 (-92d) |  | 0d → 42.76d |  |
| 23 | Наполнение сайта | 2021-06-17 17:05 → 2021-04-16 11:19 (-62d) | 2021-07-12 10:05 → 2021-05-11 15:19 (-62d) |  | 0d → 42.76d |  |
| 26 | Тестирование сайта | 2021-07-05 10:05 → 2021-03-01 11:35 (-126d) | 2021-07-21 15:45 → 2021-03-24 09:38 (-119d) | 2.52w → 3.15w | 0d → 75.35d | Создание web - сайта и поддержкаFS-1w → 9FS-1w |
| 27 | Сдача сайта в эксплуатацию | 2021-07-21 15:45 → 2021-03-24 09:38 (-119d) | 2021-07-21 15:45 → 2021-03-24 09:38 (-119d) |  | 0d → 75.35d |  |
| 28 | **Совещание** |  | 2021-07-07 10:00 → 2021-07-07 18:00 | 86.12d → 87d | 10.59d → none |  |

## Version 3 (data date 2021-04-30, saved 2021-03-27, file lab5.mpp)

Note of the change: Added RK

Last finish 2021-07-12 → 2021-07-21 (+9d). Complete tasks 18 → 17.

Added:

| ID | Task | Duration | Start | Finish | Predecessors | Resources |
| --- | --- | --- | --- | --- | --- | --- |
| 2 | **Создание интерфейса** | 74.14d | 2021-03-01 09:00 A | 2021-06-17 10:05 | 1 |  |
| 8 | **Построение базы объектов** | 86.3d | 2021-03-09 10:00 A | 2021-07-12 12:24 |  | Дополнительный сервер |
| 12 | **Создание ядра GIS** | 66.64d | 2021-03-01 09:00 A | 2021-06-04 15:05 |  |  |
| 19 | **Создание руководства пользователя** | 18.25d | 2021-06-02 10:05 | 2021-06-29 12:05 | 7FS-10d |  |
| 22 | **Создание web - сайта и поддержка** | 25d | 2021-06-04 10:05 | 2021-07-12 10:05 |  |  |

Removed: 2 Анализ; 5 Разработка; 13 Программирование; 18 Наполнение данных; 24 Тестирование

Changed:

| ID | Task | Start | Finish | Duration | Complete | Total float | Predecessors |
| --- | --- | --- | --- | --- | --- | --- | --- |
| 3 | **Разработка дизайна интерфейса** | 2021-03-17 15:00 A → 2021-03-01 09:00 A (-16d) |  | 11.25d → 28.88d |  |  |  |
| 7 | Программирование интерфейса | 2021-04-09 17:00 → 2021-06-04 15:05 (+56d) | 2021-06-08 11:55 → 2021-06-17 10:05 (+9d) | 1.96w → 1.5w |  | 12.44d → 0d | 3 → 3, 12 |
| 11 | Наполнение базы объектов |  |  |  | 0% → 22% | 0d → 7.29d |  |
| 16 | Создание рабочей версии ядра |  | 2021-06-03 09:23 → 2021-06-04 15:05 (+1d) | 6.21w → 8.13w | 0% → 44% | 26.38d → 0d |  |
| 17 | Создание мультимедиа - наполнения |  | 2021-05-26 16:00 → 2021-05-27 15:00 (+1d) |  | 0% → 48% | 31.68d → 38.09d |  |
| 18 | Создание справочной системы | 2021-06-08 11:55 → 2021-06-30 10:00 (+22d) | 2021-06-23 17:55 → 2021-07-15 09:55 (+22d) |  |  | 12.44d → 4.61d |  |
| 20 | Разработка дизайна руководства | 2021-03-03 11:35 → 2021-06-02 10:05 (+91d) | 2021-04-01 09:43 → 2021-06-09 14:05 (+69d) |  |  | 42.76d → 0d |  |
| 21 | Написание руководства пользователя | 2021-03-05 11:35 → 2021-06-04 10:05 (+91d) | 2021-03-29 15:35 → 2021-06-29 12:05 (+92d) |  |  | 42.76d → 0d |  |
| 23 | Разработка структуры сайта | 2021-03-05 11:35 → 2021-06-04 10:05 (+91d) | 2021-03-09 11:35 → 2021-06-07 10:05 (+90d) |  |  | 42.76d → 0d |  |
| 24 | Разработка дизайна сайта | 2021-03-09 11:35 → 2021-06-07 10:05 (+90d) | 2021-04-16 11:19 → 2021-06-17 17:05 (+62d) | 2.92w → 1.45w |  | 42.76d → 0d |  |
| 25 | Наполнение сайта | 2021-04-16 11:19 → 2021-06-17 17:05 (+62d) | 2021-05-11 15:19 → 2021-07-12 10:05 (+62d) |  |  | 42.76d → 0d |  |
| 26 | Тестирование сайта | 2021-03-01 11:35 → 2021-07-05 10:05 (+126d) | 2021-03-24 09:38 → 2021-07-21 15:45 (+119d) | 3.15w → 2.52w |  | 75.35d → 0d | 23FS-1w → 22FS-1w |
| 27 | Сдача сайта в эксплуатацию | 2021-03-24 09:38 → 2021-07-21 15:45 (+119d) | 2021-03-24 09:38 → 2021-07-21 15:45 (+119d) |  |  | 75.35d → 0d |  |
| 28 | **Совещание** |  | 2021-07-07 18:00 → 2021-07-07 10:00 | 87d → 86.12d |  | none → 10.59d |  |
